# ProjectPlan

Schedule from MS Project, 2006-01-23 to 2006-04-26, status date 2006-04-14, costs in $, A marks actual dates.
CMU

## Calendars

- Standard: Mon-Fri 08:00-12:00, 13:00-17:00; Sat-Sun off.

## Resources

| Resource | Rate |
| --- | --- |
| Rachel | 75 |
| Lukasz | 75 |
| Mike | 75 |
| Dick | 75 |

## Schedule

| ID | WBS | Task | Type | Duration | Start | Finish | Predecessors | Complete | Remaining | Total slack | Constraint | Resources | Work | Actual work | Cost | Actual cost |
| --- | --- | --- | --- | --- | --- | --- | --- | --- | --- | --- | --- | --- | --- | --- | --- | --- |
| 1 | 1 | Project start date | milestone | 0d | 2006-01-23 08:00 A | 2006-01-23 08:00 A |  | 100% |  |  |  |  |  |  |  |  |
| 2 | 2 | **Iteration 1** |  | 13.9d | 2006-01-23 08:00 A | 2006-02-09 16:10 |  | 96% | 0.51d | 53.11d |  |  | 72.75h | 71.25h | 5,456.25 | 5,343.75 |
| 3 | 2.1 | **Form Team** |  | 0.38d | 2006-01-23 08:00 A | 2006-01-23 11:00 A |  | 100% |  |  |  |  | 12h | 12h | 900 | 900 |
| 4 | 2.1.1 | Identify members and their backgrounds |  | 1h | 2006-01-23 08:00 A | 2006-01-23 09:00 A |  | 100% |  |  |  | Dick; Lukasz; Mike; Rachel | 4h | 4h | 300 | 300 |
| 5 | 2.1.2 | Identify specific skills and concentrations |  | 1h | 2006-01-23 09:00 A | 2006-01-23 10:00 A | 4 | 100% |  |  |  | Dick; Lukasz; Mike; Rachel | 4h | 4h | 300 | 300 |
| 6 | 2.1.3 | Finalize team and roles |  | 1h | 2006-01-23 10:00 A | 2006-01-23 11:00 A | 5 | 100% |  |  |  | Dick; Lukasz; Mike; Rachel | 4h | 4h | 300 | 300 |
| 7 | 2.2 | **Client and project selection** |  | 7.12d | 2006-01-23 11:00 A | 2006-02-01 12:00 A | 3 | 100% |  |  |  |  | 22.5h | 22.5h | 1,687.5 | 1,687.5 |
| 8 | 2.2.1 | Research clients and projects |  | 0.31d | 2006-01-23 11:00 A | 2006-01-23 14:30 A |  | 100% |  |  |  | Dick; Lukasz; Mike; Rachel | 6.5h | 6.5h | 487.5 | 487.5 |
| 9 | 2.2.2 | Select project |  | 0.25d | 2006-01-26 11:00 A | 2006-01-26 14:00 A | 8 | 100% |  |  |  | Dick; Lukasz; Mike; Rachel | 7h | 7h | 525 | 525 |
| 10 | 2.2.3 | Contact client |  | 0.25d | 2006-01-31 11:00 A | 2006-01-31 14:00 A | 9 | 100% |  |  |  | Dick; Lukasz; Mike; Rachel | 5h | 5h | 375 | 375 |
| 11 | 2.2.4 | Meet client |  | 1h | 2006-02-01 11:00 A | 2006-02-01 12:00 A | 10 | 100% |  |  |  | Dick; Lukasz; Mike; Rachel | 4h | 4h | 300 | 300 |
| 12 | 2.3 | **Project proposal** |  | 2.76d | 2006-02-01 13:00 A | 2006-02-06 10:05 A | 7 | 100% |  |  |  |  | 6.08h | 6.08h | 456.25 | 456.25 |
| 13 | 2.3.1 | Develop initial draft |  | 2h | 2006-02-01 13:00 A | 2006-02-01 15:00 A |  | 100% |  |  |  | Dick | 2h | 2h | 150 | 150 |
| 14 | 2.3.2 | Review and revise draft |  | 0.12d | 2006-02-02 10:00 A | 2006-02-02 11:00 A | 13 | 100% |  |  |  | Dick; Rachel; Lukasz; Mike | 4h | 4h | 300 | 300 |
| 15 | 2.3.3 | Submit proposal |  | 5min | 2006-02-06 10:00 A | 2006-02-06 10:05 A | 14 | 100% |  |  |  | Dick | 0.08h | 0.08h | 6.25 | 6.25 |
| 16 | 2.4 | **System requirements** |  | 3.39d | 2006-02-06 10:05 A | 2006-02-09 14:10 | 12 | 84% | 0.55d | 53.36d |  |  | 5.08h | 4.58h | 381.25 | 343.75 |
| 17 | 2.4.1 | Develop initial draft |  | 0.5h | 2006-02-06 10:05 A | 2006-02-06 10:35 A |  | 100% |  |  |  | Lukasz | 0.5h | 0.5h | 37.5 | 37.5 |
| 18 | 2.4.2 | Review requirements with client |  | 1h | 2006-02-07 08:05 A | 2006-02-07 09:05 A | 17 | 100% |  |  |  | Lukasz | 1h | 1h | 75 | 75 |
| 19 | 2.4.3 | Review and revise draft |  | 0.12d | 2006-02-07 10:05 A | 2006-02-07 11:05 A | 18 | 100% |  |  |  | Dick; Rachel; Lukasz; Mike | 3h | 3h | 225 | 225 |
| 20 | 2.4.4 | Compile revisions into final draft |  | 0.5h | 2006-02-09 10:05 A | 2006-02-09 10:35 | 19 |  | 0.5h | 53.69d |  | Lukasz | 0.5h |  | 37.5 |  |
| 21 | 2.4.5 | Submit final draft |  | 5min | 2006-02-09 14:05 A | 2006-02-09 14:10 A | 20 | 100% |  |  |  | Lukasz | 0.08h | 0.08h | 6.25 | 6.25 |
| 22 | 2.5 | **Strategic mini plan** |  | 2.64d | 2006-02-06 10:05 A | 2006-02-08 16:10 | 12 | 95% | 0.12d | 54.11d |  |  | 25.08h | 24.08h | 1,881.25 | 1,806.25 |
| 23 | 2.5.1 | Complete external analysis |  | 5h | 2006-02-06 10:05 A | 2006-02-06 16:05 A |  | 100% |  |  |  | Rachel | 5h | 5h | 375 | 375 |
| 24 | 2.5.2 | Complete internal analysis |  | 4h | 2006-02-06 10:05 A | 2006-02-06 15:05 A |  | 100% |  |  |  | Dick | 4h | 4h | 300 | 300 |
| 25 | 2.5.3 | Complete resources, capabilities, competitive advantages analysis |  | 4h | 2006-02-06 10:05 A | 2006-02-06 15:05 A |  | 100% |  |  |  | Mike | 4h | 4h | 300 | 300 |
| 26 | 2.5.4 | Complete strategic analysis |  | 4h | 2006-02-06 10:05 A | 2006-02-06 15:05 A |  | 100% |  |  |  | Lukasz | 4h | 4h | 300 | 300 |
| 27 | 2.5.5 | Compile strategic mini plan initial draft |  | 1h | 2006-02-07 10:05 A | 2006-02-07 11:05 A | 23, 24, 25, 26 | 100% |  |  |  | Mike | 1h | 1h | 75 | 75 |
| 28 | 2.5.6 | Review and revise draft |  | 0.25d | 2006-02-07 14:05 A | 2006-02-07 16:05 A | 27 | 100% |  |  |  | Dick; Lukasz; Mike; Rachel | 5h | 5h | 375 | 375 |
| 29 | 2.5.7 | Compile revisions into final draft |  | 2h | 2006-02-08 14:05 A | 2006-02-08 16:10 | 28 | 50% | 1h | 54.11d |  | Dick | 2h | 1h | 150 | 75 |
| 30 | 2.5.8 | Submit strategic mini plan |  | 5min | 2006-02-08 15:05 A | 2006-02-08 15:10 A | 29 | 100% |  |  |  | Dick | 0.08h | 0.08h | 6.25 | 6.25 |
| 31 | 2.6 | Setup hosting, development and collaboration environment |  | 2h | 2006-02-09 14:10 A | 2006-02-09 16:10 A | 16 | 100% |  |  |  | Lukasz | 2h | 2h | 150 | 150 |
| 32 | 3 | End of Iteration 1 |  | 1d | 2006-02-17 08:00 A | 2006-02-17 17:00 A |  | 100% |  |  | start no earlier than 2006-02-17 08:00 |  |  |  |  |  |

| ID | WBS | Task | Duration | Start | Finish | Predecessors | Complete | Remaining | Total slack | Free slack | Constraint | Resources | Work | Actual work | Cost | Actual cost |
| --- | --- | --- | --- | --- | --- | --- | --- | --- | --- | --- | --- | --- | --- | --- | --- | --- |
| 33 | 4 | **Iteration 2** | 6.76d | 2006-02-20 08:00 A | 2006-02-28 15:05 | 32 | 84% | 1.08d | 40.25d |  | start no earlier than 2006-02-18 08:00 |  | 106.92h | 94.92h | 8,018.75 | 7,118.75 |
| 34 | 4.1 | **Cost/benefit analysis** | 6.26d | 2006-02-20 08:00 A | 2006-02-28 10:05 |  | 83% | 1.08d | 40.75d |  |  |  | 28.58h | 24.58h | 2,143.75 | 1,843.75 |
| 35 | 4.1.1 | Research cost/benefit analysis | 1.25d | 2006-02-20 08:00 A | 2006-02-22 10:00 |  | 80% | 0.25d | 44.76d |  |  | Mike; Dick | 11.5h | 9.5h | 862.5 | 712.5 |
| 36 | 4.1.2 | Complete initial draft | 1d | 2006-02-21 08:00 A | 2006-02-21 17:00 A | 35 | 100% |  |  |  |  | Dick | 8h | 8h | 600 | 600 |
| 37 | 4.1.3 | Review and revise draft | 0.38d | 2006-02-24 08:00 A | 2006-02-24 11:00 | 36 | 67% | 0.12d | 42.51d | 1.62d |  | Dick; Lukasz; Mike; Rachel | 7h | 6h | 525 | 450 |
| 38 | 4.1.4 | Compile final draft | 2h | 2006-02-28 08:00 A | 2006-02-28 10:00 | 37 | 50% | 1h | 40.76d |  |  | Dick | 2h | 1h | 150 | 75 |
| 39 | 4.1.5 | Submit final draft | 5min | 2006-02-28 10:00 A | 2006-02-28 10:05 A | 38 | 100% |  |  |  |  | Dick | 0.08h | 0.08h | 6.25 | 6.25 |
| 40 | 4.2 | **Project management plan/schedule** | 6.76d | 2006-02-20 08:00 A | 2006-02-28 15:05 A |  | 100% |  |  |  |  |  | 25.08h | 25.08h | 1,881.25 | 1,881.25 |
| 41 | 4.2.1 | Define project tasks | 0.75d | 2006-02-20 08:00 A | 2006-02-20 15:00 A |  | 100% |  |  |  |  | Lukasz; Rachel | 8h | 8h | 600 | 600 |
| 42 | 4.2.2 | Develop initial schedule for task completion | 6h | 2006-02-24 08:00 A | 2006-02-24 15:00 A | 41 | 100% |  |  |  |  | Lukasz; Rachel | 8h | 8h | 600 | 600 |
| 43 | 4.2.3 | Determine resources | 2h | 2006-02-27 08:00 A | 2006-02-27 10:00 A | 42 | 100% |  |  |  |  | Rachel | 2h | 2h | 150 | 150 |
| 44 | 4.2.4 | Review and revise project plan/schedule | 0.25d | 2006-02-27 13:00 A | 2006-02-27 15:00 A | 43 | 100% |  |  |  |  | Dick; Lukasz; Mike; Rachel | 5h | 5h | 375 | 375 |
| 45 | 4.2.5 | Compile final project plan/schedule | 2h | 2006-02-28 13:00 A | 2006-02-28 15:00 A | 44 | 100% |  |  |  |  | Rachel | 2h | 2h | 150 | 150 |
| 46 | 4.2.6 | Submit final project plan/schedule | 5min | 2006-02-28 15:00 A | 2006-02-28 15:05 A | 45 | 100% |  |  |  |  | Rachel | 0.08h | 0.08h | 6.25 | 6.25 |
| 47 | 4.3 | **Database requirements** | 2.5d | 2006-02-20 08:00 A | 2006-02-22 12:00 |  | 72% | 0.71d | 44.51d |  |  |  | 10.58h | 8.58h | 793.75 | 643.75 |
| 48 | 4.3.1 | Develop database requirements | 5h | 2006-02-20 08:00 A | 2006-02-22 12:00 |  | 60% | 2h | 44.51d |  |  | Dick; Lukasz; Mike | 8.5h | 6.5h | 637.5 | 487.5 |
| 49 | 4.3.2 | Review requirements with client | 1h | 2006-02-20 11:00 A | 2006-02-20 12:00 A | 48 | 100% |  |  |  |  | Lukasz | 1h | 1h | 75 | 75 |
| 50 | 4.3.3 | Compile final database requirements | 1h | 2006-02-20 13:00 A | 2006-02-20 14:00 A | 49 | 100% |  |  |  |  | Dick | 1h | 1h | 75 | 75 |
| 51 | 4.3.4 | Submit database requirements | 5min | 2006-02-20 14:00 A | 2006-02-20 14:05 A | 50 | 100% |  |  |  |  | Dick | 0.08h | 0.08h | 6.25 | 6.25 |
| 52 | 4.4 | **Backend Architecture** | 2.75d | 2006-02-20 08:00 A | 2006-02-22 15:00 |  | 64% | 0.98d | 44.26d |  |  |  | 9.58h | 7.58h | 718.75 | 568.75 |
| 53 | 4.4.1 | Develop backend architecture | 4h | 2006-02-20 08:00 A | 2006-02-22 15:00 |  | 50% | 2h | 44.26d |  |  | Dick; Lukasz; Mike | 8h | 6h | 600 | 450 |
| 54 | 4.4.2 | Review backend architecture with client | 0.5h | 2006-02-20 10:00 A | 2006-02-20 10:30 A | 53 | 100% |  |  |  |  | Lukasz | 0.5h | 0.5h | 37.5 | 37.5 |
| 55 | 4.4.3 | Compile final backend architecture | 1h | 2006-02-20 11:00 A | 2006-02-20 12:00 A | 54 | 100% |  |  |  |  | Mike | 1h | 1h | 75 | 75 |
| 56 | 4.4.4 | Submit backend architecture | 5min | 2006-02-20 13:00 A | 2006-02-20 13:05 A | 55 | 100% |  |  |  |  | Mike | 0.08h | 0.08h | 6.25 | 6.25 |

| ID | WBS | Task | Duration | Start | Finish | Predecessors | Complete | Remaining | Total slack | Constraint | Resources | Work | Actual work | Cost | Actual cost |
| --- | --- | --- | --- | --- | --- | --- | --- | --- | --- | --- | --- | --- | --- | --- | --- |
| 57 | 4.5 | **Database schema** | 3.12d | 2006-02-20 08:00 A | 2006-02-23 09:00 |  | 63% | 1.16d | 43.89d |  |  | 11.08h | 8.08h | 831.25 | 606.25 |
| 58 | 4.5.1 | Develop database schema | 6h | 2006-02-20 08:00 A | 2006-02-23 09:00 |  | 50% | 3h | 43.89d |  | Dick; Lukasz; Mike | 9h | 6h | 675 | 450 |
| 59 | 4.5.2 | Review schema with client | 1h | 2006-02-20 11:00 A | 2006-02-20 12:00 A | 58 | 100% |  |  |  | Lukasz | 1h | 1h | 75 | 75 |
| 60 | 4.5.3 | Compile final database schema- | 1h | 2006-02-20 13:00 A | 2006-02-20 14:00 A | 59 | 100% |  |  |  | Mike | 1h | 1h | 75 | 75 |
| 61 | 4.5.4 | Submit schema | 5min | 2006-02-20 14:00 A | 2006-02-20 14:05 A | 60 | 100% |  |  |  | Mike | 0.08h | 0.08h | 6.25 | 6.25 |
| 62 | 4.6 | Setup project in subversion | 30min | 2006-02-20 08:00 A | 2006-02-20 08:30 A |  | 100% |  |  |  | Lukasz | 0.5h | 0.5h | 37.5 | 37.5 |
| 63 | 4.7 | **Implementation** | 0.62d | 2006-02-20 08:30 A | 2006-02-20 14:30 | 62 | 83% | 0.1d | 46.32d |  |  | 10h | 9h | 750 | 675 |
| 64 | 4.7.1 | Commerce Manager > Product Catalog Module | 4h | 2006-02-20 08:30 A | 2006-02-20 13:30 A |  | 100% |  |  |  | Lukasz; Mike | 7h | 7h | 525 | 525 |
| 65 | 4.7.2 | Commerce Manager > Settings Module | 2h | 2006-02-20 08:30 A | 2006-02-20 14:30 |  | 50% | 1h | 46.32d |  | Lukasz; Mike | 3h | 2h | 225 | 150 |
| 66 | 4.8 | **Testing and Debugging** | 0.5d | 2006-02-21 08:30 A | 2006-02-21 13:30 A | 63 | 100% |  |  |  |  | 8.5h | 8.5h | 637.5 | 637.5 |
| 67 | 4.8.1 | Testing Commerce Manager and reporting bugs | 2h | 2006-02-21 08:30 A | 2006-02-21 10:30 A |  | 100% |  |  |  | Dick; Lukasz; Mike; Rachel | 4.5h | 4.5h | 337.5 | 337.5 |
| 68 | 4.8.2 | Applying fixes to Commerce Manager | 2h | 2006-02-21 10:30 A | 2006-02-21 13:30 A | 67 | 100% |  |  |  | Lukasz; Mike | 4h | 4h | 300 | 300 |
| 69 | 4.9 | Release application to the test server | 0.5h | 2006-02-21 15:30 A | 2006-02-21 16:00 A | 66 | 100% |  |  |  | Lukasz | 0.5h | 0.5h | 37.5 | 37.5 |
| 70 | 4.10 | Revise system requirements | 1h | 2006-02-21 15:30 A | 2006-02-21 16:30 A | 66 | 100% |  |  |  | Lukasz; Mike | 1.5h | 1.5h | 112.5 | 112.5 |
| 71 | 4.11 | Update project management plan/schedule | 1h | 2006-02-21 16:30 A | 2006-02-22 08:30 A | 70 | 100% |  |  |  | Rachel | 1h | 1h | 75 | 75 |
| 72 | 5 | End of Iteration 2 | 1d | 2006-03-03 08:00 A | 2006-03-03 17:00 A |  | 100% |  |  | start no earlier than 2006-03-03 08:00 |  |  |  |  |  |
| 73 | 6 | **Iteration 3** | 10d | 2006-03-06 08:00 A | 2006-03-17 17:00 A | 72 | 100% |  |  | start no earlier than 2006-03-04 08:00 |  | 25.5h | 25.5h | 1,912.5 | 1,912.5 |
| 74 | 6.1 | **Implementation** | 0.5d | 2006-03-06 08:00 A | 2006-03-06 12:00 A |  | 100% |  |  |  |  | 10h | 10h | 750 | 750 |
| 75 | 6.1.1 | Commerce Manager > Customers Module | 2h | 2006-03-06 08:00 A | 2006-03-06 10:00 A |  | 100% |  |  |  | Lukasz; Mike | 4h | 4h | 300 | 300 |
| 76 | 6.1.2 | Commerce Manager > Orders Module | 4h | 2006-03-06 08:00 A | 2006-03-06 12:00 A |  | 100% |  |  |  | Lukasz; Mike | 6h | 6h | 450 | 450 |
| 77 | 6.2 | **Revisions** | 0.25d | 2006-03-06 15:00 A | 2006-03-06 17:00 A | 74 | 100% |  |  |  |  | 6h | 6h | 450 | 450 |
| 78 | 6.2.1 | Commerce Manager > Product Catalog Module | 2h | 2006-03-06 15:00 A | 2006-03-06 17:00 A |  | 100% |  |  |  | Lukasz; Mike | 4h | 4h | 300 | 300 |
| 79 | 6.2.2 | Commerce Manager > Settings Module | 1h | 2006-03-06 15:00 A | 2006-03-06 16:00 A |  | 100% |  |  |  | Lukasz; Mike | 2h | 2h | 150 | 150 |
| 80 | 6.3 | **Testing and Debugging** | 0.44d | 2006-03-07 10:00 A | 2006-03-07 14:30 A | 77 | 100% |  |  |  |  | 6h | 6h | 450 | 450 |
| 81 | 6.3.1 | Testing Commerce Manager and reporting bugs | 1h | 2006-03-07 10:00 A | 2006-03-07 11:00 A |  | 100% |  |  |  | Dick; Lukasz; Mike; Rachel | 3h | 3h | 225 | 225 |
| 82 | 6.3.2 | Applying fixes to Commerce Manager | 1.5h | 2006-03-07 13:00 A | 2006-03-07 14:30 A | 81 | 100% |  |  |  | Lukasz; Mike | 3h | 3h | 225 | 225 |
| 83 | 6.4 | Release application to the test server | 0.5h | 2006-03-08 08:00 A | 2006-03-08 08:30 A | 80 | 100% |  |  |  | Lukasz | 0.5h | 0.5h | 37.5 | 37.5 |
| 84 | 6.5 | Revise system requirements | 1h | 2006-03-08 09:00 A | 2006-03-08 10:00 A | 83 | 100% |  |  |  | Lukasz; Mike | 2h | 2h | 150 | 150 |
| 85 | 6.6 | Update project management plan/schedule | 1h | 2006-03-08 10:00 A | 2006-03-08 11:00 A | 84 | 100% |  |  |  | Rachel | 1h | 1h | 75 | 75 |
| 86 | 6.7 | End of Iteration 3 | 1d | 2006-03-17 08:00 A | 2006-03-17 17:00 A |  | 100% |  |  | start no earlier than 2006-03-17 08:00 |  |  |  |  |  |

| ID | WBS | Task | Duration | Start | Finish | Predecessors | Complete | Remaining | Total slack | Constraint | Resources | Work | Actual work | Cost | Actual cost |
| --- | --- | --- | --- | --- | --- | --- | --- | --- | --- | --- | --- | --- | --- | --- | --- |
| 87 | 7 | **Iteration 4** | 10d | 2006-03-20 08:00 A | 2006-03-31 17:00 | 86 | 93% | 0.69d | 17.01d | start no earlier than 2006-03-18 08:00 |  | 58.08h | 55.08h | 4,356.25 | 4,131.25 |
| 88 | 7.1 | **Systems architecture** | 1.26d | 2006-03-20 08:00 A | 2006-03-21 10:05 |  | 58% | 0.53d | 25.75d |  |  | 10.08h | 7.08h | 756.25 | 531.25 |
| 89 | 7.1.1 | Develop document detailing architecture | 2h | 2006-03-20 08:00 A | 2006-03-20 10:00 A |  | 100% |  |  |  | Lukasz | 2h | 2h | 150 | 150 |
| 90 | 7.1.2 | Review architecture document with client | 1h | 2006-03-20 14:00 A | 2006-03-20 15:00 A | 89 | 100% |  |  |  | Dick; Rachel; Lukasz; Mike | 4h | 4h | 300 | 300 |
| 91 | 7.1.3 | Compile final architecture document | 4h | 2006-03-20 15:00 A | 2006-03-21 10:05 | 90 | 25% | 3h | 25.75d |  | Dick | 4h | 1h | 300 | 75 |
| 92 | 7.1.4 | Submit final architecture document | 5min | 2006-03-20 16:00 A | 2006-03-20 16:05 A | 91 | 100% |  |  |  | Dick | 0.08h | 0.08h | 6.25 | 6.25 |
| 93 | 7.2 | **Software engineering** | 2.12d | 2006-03-20 08:00 A | 2006-03-22 09:00 A |  | 100% |  |  |  |  | 10.5h | 10.5h | 787.5 | 787.5 |
| 94 | 7.2.1 | Develop document detailing software engineering usage | 3h | 2006-03-20 08:00 A | 2006-03-20 11:00 A |  | 100% |  |  |  | Rachel | 3h | 3h | 225 | 225 |
| 95 | 7.2.2 | Review document | 0.12d | 2006-03-20 14:00 A | 2006-03-20 15:00 A | 94 | 100% |  |  |  | Rachel; Dick; Lukasz; Mike | 3.5h | 3.5h | 262.5 | 262.5 |
| 96 | 7.2.3 | Compile final software engineering document | 2h | 2006-03-21 14:00 A | 2006-03-21 16:00 A | 95 | 100% |  |  |  | Rachel | 2h | 2h | 150 | 150 |
| 97 | 7.2.4 | Submit final software engineering document | 2h | 2006-03-21 16:00 A | 2006-03-22 09:00 A | 96 | 100% |  |  |  | Rachel | 2h | 2h | 150 | 150 |
| 98 | 7.3 | **Implementation** | 0.75d | 2006-03-20 08:00 A | 2006-03-20 15:00 A |  | 100% |  |  |  |  | 11h | 11h | 825 | 825 |
| 99 | 7.3.1 | Storefront | 6h | 2006-03-20 08:00 A | 2006-03-20 15:00 A |  | 100% |  |  |  | Lukasz; Mike | 11h | 11h | 825 | 825 |
| 100 | 7.4 | **Revisions** | 0.44d | 2006-03-22 13:00 A | 2006-03-22 16:30 A |  | 100% |  |  |  |  | 14.5h | 14.5h | 1,087.5 | 1,087.5 |
| 101 | 7.4.1 | Commerce Manager > Product Catalog Module | 1h | 2006-03-22 13:00 A | 2006-03-22 14:00 A | 99 | 100% |  |  |  | Lukasz; Mike | 2h | 2h | 150 | 150 |
| 102 | 7.4.2 | Commerce Manager > Settings Module | 1h | 2006-03-22 13:00 A | 2006-03-22 14:00 A | 99 | 100% |  |  |  | Lukasz; Mike | 2h | 2h | 150 | 150 |
| 103 | 7.4.3 | Commerce Manager > Customers Module | 2h | 2006-03-22 13:00 A | 2006-03-22 15:00 A | 99 | 100% |  |  |  | Lukasz; Mike | 4h | 4h | 300 | 300 |
| 104 | 7.4.4 | Commerce Manager > Orders Module | 3.5h | 2006-03-22 13:00 A | 2006-03-22 16:30 A | 99 | 100% |  |  |  | Lukasz; Mike | 6.5h | 6.5h | 487.5 | 487.5 |
| 105 | 7.5 | **Testing and Debugging** | 0.5d | 2006-03-23 08:00 A | 2006-03-23 12:00 A | 100 | 100% |  |  |  |  | 8h | 8h | 600 | 600 |
| 106 | 7.5.1 | Testing and reporting bugs | 2h | 2006-03-23 08:00 A | 2006-03-23 10:00 A |  | 100% |  |  |  | Dick; Lukasz; Mike; Rachel | 4.5h | 4.5h | 337.5 | 337.5 |
| 107 | 7.5.2 | Applying fixes | 2h | 2006-03-23 10:00 A | 2006-03-23 12:00 A | 106 | 100% |  |  |  | Lukasz; Mike | 3.5h | 3.5h | 262.5 | 262.5 |
| 108 | 7.6 | Release application to the test server | 1h | 2006-03-23 15:00 A | 2006-03-23 16:00 A | 105 | 100% |  |  |  | Lukasz | 1h | 1h | 75 | 75 |
| 109 | 7.7 | Revise system requirements | 1h | 2006-03-23 16:00 A | 2006-03-23 17:00 A | 108 | 100% |  |  |  | Lukasz; Mike | 2h | 2h | 150 | 150 |
| 110 | 7.8 | Update project management plan/schedule | 1h | 2006-03-24 08:00 A | 2006-03-24 09:00 A | 109 | 100% |  |  |  | Rachel | 1h | 1h | 75 | 75 |
| 111 | 7.9 | End of Iteration 4 | 1d | 2006-03-31 08:00 A | 2006-03-31 17:00 A |  | 100% |  |  | start no earlier than 2006-03-31 08:00 |  |  |  |  |  |

| ID | WBS | Task | Type | Duration | Start | Finish | Predecessors | Complete | Remaining | Total slack | Constraint | Resources | Work | Actual work | Cost | Actual cost |
| --- | --- | --- | --- | --- | --- | --- | --- | --- | --- | --- | --- | --- | --- | --- | --- | --- |
| 112 | 8 | **Iteration 5** |  | 9d | 2006-04-03 08:00 A | 2006-04-14 08:00 | 111 | 98% | 0.19d | 8.01d | start no earlier than 2006-04-01 08:00 |  | 75.67h | 74.67h | 5,675 | 5,600 |
| 113 | 8.1 | **Usability requirements** |  | 2.01d | 2006-04-03 08:00 A | 2006-04-05 08:05 A |  | 100% |  |  |  |  | 16.08h | 16.08h | 1,206.25 | 1,206.25 |
| 114 | 8.1.1 | Review necessary requirements with client |  | 1h | 2006-04-03 08:00 A | 2006-04-03 09:00 A |  | 100% |  |  |  | Rachel; Dick; Lukasz; Mike | 4h | 4h | 300 | 300 |
| 115 | 8.1.2 | Develop document detailing requirements |  | 5h | 2006-04-03 09:00 A | 2006-04-03 15:00 A | 114 | 100% |  |  |  | Rachel | 5h | 5h | 375 | 375 |
| 116 | 8.1.3 | Review requirements document |  | 0.25d | 2006-04-03 15:00 A | 2006-04-03 17:00 A | 115 | 100% |  |  |  | Rachel; Dick; Lukasz; Mike | 5h | 5h | 375 | 375 |
| 117 | 8.1.4 | Compile final requirements document |  | 2h | 2006-04-04 15:00 A | 2006-04-04 17:00 A | 116 | 100% |  |  |  | Dick | 2h | 2h | 150 | 150 |
| 118 | 8.1.5 | Submit final requirements document |  | 5min | 2006-04-05 08:00 A | 2006-04-05 08:05 A | 117 | 100% |  |  |  | Dick | 0.08h | 0.08h | 6.25 | 6.25 |
| 119 | 8.2 | **Front-end architecture** |  | 1.89d | 2006-04-03 08:00 A | 2006-04-04 16:05 |  | 88% | 0.23d | 15.12d |  |  | 11.08h | 10.08h | 831.25 | 756.25 |
| 120 | 8.2.1 | Develop document detailing architecture |  | 4h | 2006-04-03 08:00 A | 2006-04-03 12:00 |  | 75% | 1h | 16.51d |  | Dick | 4h | 3h | 300 | 225 |
| 121 | 8.2.2 | Review architecture document |  | 0.25d | 2006-04-03 14:00 A | 2006-04-03 16:00 A | 120 | 100% |  |  |  | Dick; Lukasz; Mike; Rachel | 5h | 5h | 375 | 375 |
| 122 | 8.2.3 | Compile final architecture document |  | 2h | 2006-04-04 14:00 A | 2006-04-04 16:00 A | 121 | 100% |  |  |  | Rachel | 2h | 2h | 150 | 150 |
| 123 | 8.2.4 | Submit final architecture document |  | 5min | 2006-04-04 16:00 A | 2006-04-04 16:05 A | 122 | 100% |  |  |  | Rachel | 0.08h | 0.08h | 6.25 | 6.25 |
| 124 | 8.3 | **Implementation** |  | 0.88d | 2006-04-03 08:00 A | 2006-04-03 16:00 A |  | 100% |  |  |  |  | 11h | 11h | 825 | 825 |
| 125 | 8.3.1 | Storefront Web Services API |  | 7h | 2006-04-03 08:00 A | 2006-04-03 16:00 A |  | 100% |  |  |  | Lukasz; Mike | 11h | 11h | 825 | 825 |
| 126 | 8.4 | **Revisions** |  | 0.75d | 2006-04-05 13:00 A | 2006-04-06 10:00 A | 124 | 100% |  |  |  |  | 25.5h | 25.5h | 1,912.5 | 1,912.5 |
| 127 | 8.4.1 | Commerce Manager > Product Catalog Module |  | 1h | 2006-04-05 13:00 A | 2006-04-05 14:00 A |  | 100% |  |  |  | Lukasz; Mike | 2h | 2h | 150 | 150 |
| 128 | 8.4.2 | Commerce Manager > Settings Module |  | 1h | 2006-04-05 13:00 A | 2006-04-05 14:00 A |  | 100% |  |  |  | Lukasz; Mike | 2h | 2h | 150 | 150 |
| 129 | 8.4.3 | Commerce Manager > Customers Module |  | 2h | 2006-04-05 13:00 A | 2006-04-05 15:00 A |  | 100% |  |  |  | Lukasz; Mike | 4h | 4h | 300 | 300 |
| 130 | 8.4.4 | Commerce Manager > Orders Module |  | 4h | 2006-04-05 13:00 A | 2006-04-05 17:00 A |  | 100% |  |  |  | Lukasz; Mike | 7h | 7h | 525 | 525 |
| 131 | 8.4.5 | Storefront |  | 6h | 2006-04-05 13:00 A | 2006-04-06 10:00 A |  | 100% |  |  |  | Lukasz; Mike | 10.5h | 10.5h | 787.5 | 787.5 |
| 132 | 8.5 | **Testing and Debugging** |  | 0.5d | 2006-04-06 13:00 A | 2006-04-06 17:00 A | 126 | 100% |  |  |  |  | 8h | 8h | 600 | 600 |
| 133 | 8.5.1 | Testing and reporting bugs |  | 2h | 2006-04-06 13:00 A | 2006-04-06 15:00 A |  | 100% |  |  |  | Dick; Lukasz; Mike; Rachel | 4.5h | 4.5h | 337.5 | 337.5 |
| 134 | 8.5.2 | Applying fixes |  | 2h | 2006-04-06 15:00 A | 2006-04-06 17:00 A | 133 | 100% |  |  |  | Lukasz; Mike | 3.5h | 3.5h | 262.5 | 262.5 |
| 135 | 8.6 | Release application to the test server |  | 1h | 2006-04-07 10:00 A | 2006-04-07 11:00 A | 132 | 100% |  |  |  | Lukasz | 1h | 1h | 75 | 75 |
| 136 | 8.7 | Revise system requirements |  | 1h | 2006-04-07 11:00 A | 2006-04-07 12:00 A | 135 | 100% |  |  |  | Lukasz; Mike | 2h | 2h | 150 | 150 |
| 137 | 8.8 | Update project management plan/schedule |  | 1h | 2006-04-07 13:00 A | 2006-04-07 14:00 A | 136 | 100% |  |  |  | Rachel | 1h | 1h | 75 | 75 |
| 138 | 8.9 | End of Iteration 5 | milestone | 0d | 2006-04-14 08:00 A | 2006-04-14 08:00 A |  | 100% |  |  | start no earlier than 2006-04-14 08:00 |  |  |  |  |  |

| ID | WBS | Task | Duration | Start | Finish | Predecessors | Complete | Remaining | Total slack | Free slack | Constraint | Resources | Work | Actual work | Cost | Actual cost |
| --- | --- | --- | --- | --- | --- | --- | --- | --- | --- | --- | --- | --- | --- | --- | --- | --- |
| 139 | 9 | **Iteration 6** | 7.01d | 2006-04-17 08:00 A | 2006-04-26 08:05 | 138 | 95% | 0.39d | 0d |  | start no earlier than 2006-04-15 08:00 |  | 116.83h | 112.83h | 8,762.5 | 8,462.5 |
| 140 | 9.1 | **Network requirements** | 1.39d | 2006-04-17 08:00 A | 2006-04-18 11:05 |  | 88% | 0.17d | 5.62d |  |  |  | 14.08h | 13.08h | 1,056.25 | 981.25 |
| 141 | 9.1.1 | Review necessary requirements with client | 1h | 2006-04-17 08:00 A | 2006-04-17 09:00 A |  | 100% |  |  |  |  | Dick; Lukasz; Mike; Rachel | 4h | 4h | 300 | 300 |
| 142 | 9.1.2 | Develop document detailing network requirements | 3h | 2006-04-17 09:00 A | 2006-04-17 12:00 A | 141 | 100% |  |  |  |  | Rachel | 3h | 3h | 225 | 225 |
| 143 | 9.1.3 | Review network requirements document | 1h | 2006-04-17 15:00 A | 2006-04-17 16:00 A | 142 | 100% |  |  |  |  | Dick; Lukasz; Mike; Rachel | 4h | 4h | 300 | 300 |
| 144 | 9.1.4 | Compile final network requirements document | 3h | 2006-04-17 16:00 A | 2006-04-18 11:05 | 143 | 67% | 1h | 5.62d |  |  | Dick | 3h | 2h | 225 | 150 |
| 145 | 9.1.5 | Submit final network requirements document | 5min | 2006-04-18 09:00 A | 2006-04-18 09:05 A | 144 | 100% |  |  |  |  | Dick | 0.08h | 0.08h | 6.25 | 6.25 |
| 146 | 9.2 | **Network architecture** | 1.26d | 2006-04-17 08:00 A | 2006-04-18 10:05 |  | 75% | 0.31d | 5.75d |  |  |  | 10.58h | 8.58h | 793.75 | 643.75 |
| 147 | 9.2.1 | Develop document detailing network architecture | 4h | 2006-04-17 08:00 A | 2006-04-17 12:00 |  | 75% | 1h | 6.39d | 0.12d |  | Dick | 4h | 3h | 300 | 225 |
| 148 | 9.2.2 | Review network architecture document | 2h | 2006-04-17 14:00 A | 2006-04-18 10:05 | 147 | 50% | 1h | 5.75d |  |  | Dick; Lukasz; Mike; Rachel | 4.5h | 3.5h | 337.5 | 262.5 |
| 149 | 9.2.3 | Compile final network architecture document | 2h | 2006-04-17 15:00 A | 2006-04-17 17:00 A | 148 | 100% |  |  |  |  | Rachel | 2h | 2h | 150 | 150 |
| 150 | 9.2.4 | Submit final network architecture document | 5min | 2006-04-18 08:00 A | 2006-04-18 08:05 A | 149 | 100% |  |  |  |  | Rachel | 0.08h | 0.08h | 6.25 | 6.25 |
| 151 | 9.3 | **Network plan** | 1.01d | 2006-04-17 08:00 A | 2006-04-18 08:05 |  | 84% | 0.17d | 6d |  |  |  | 8.58h | 7.58h | 643.75 | 568.75 |
| 152 | 9.3.1 | Develop document detailing network plan | 4h | 2006-04-17 08:00 A | 2006-04-17 14:00 |  | 75% | 1h | 6.39d |  |  | Dick | 4h | 3h | 300 | 225 |
| 153 | 9.3.2 | Review network plan document | 1h | 2006-04-17 14:00 A | 2006-04-17 15:00 A | 152 | 100% |  |  |  |  | Dick; Lukasz; Mike; Rachel | 3.5h | 3.5h | 262.5 | 262.5 |
| 154 | 9.3.3 | Compile final network plan document | 1h | 2006-04-17 15:00 A | 2006-04-17 16:00 A | 153 | 100% |  |  |  |  | Rachel | 1h | 1h | 75 | 75 |
| 155 | 9.3.4 | Submit final network plan document | 5min | 2006-04-18 08:00 A | 2006-04-18 08:05 A | 154 | 100% |  |  |  |  | Rachel | 0.08h | 0.08h | 6.25 | 6.25 |
| 156 | 9.4 | **Revisions** | 0.5d | 2006-04-17 08:00 A | 2006-04-17 12:00 A |  | 100% |  |  |  |  |  | 20.5h | 20.5h | 1,537.5 | 1,537.5 |
| 157 | 9.4.1 | Commerce Manager > Product Catalog Module | 1h | 2006-04-17 08:00 A | 2006-04-17 09:00 A |  | 100% |  |  |  |  | Lukasz; Mike | 2h | 2h | 150 | 150 |
| 158 | 9.4.2 | Commerce Manager > Settings Module | 1h | 2006-04-17 08:00 A | 2006-04-17 09:00 A |  | 100% |  |  |  |  | Lukasz; Mike | 2h | 2h | 150 | 150 |
| 159 | 9.4.3 | Commerce Manager > Customers Module | 1h | 2006-04-17 08:00 A | 2006-04-17 09:00 A |  | 100% |  |  |  |  | Lukasz; Mike | 2h | 2h | 150 | 150 |
| 160 | 9.4.4 | Commerce Manager > Orders Module | 1h | 2006-04-17 08:00 A | 2006-04-17 09:00 A |  | 100% |  |  |  |  | Lukasz; Mike | 2h | 2h | 150 | 150 |
| 161 | 9.4.5 | Storefront | 2.5h | 2006-04-17 08:00 A | 2006-04-17 10:30 A |  | 100% |  |  |  |  | Lukasz; Mike | 4.5h | 4.5h | 337.5 | 337.5 |
| 162 | 9.4.6 | Storefront Web Services API | 4h | 2006-04-17 08:00 A | 2006-04-17 12:00 A |  | 100% |  |  |  |  | Lukasz; Mike | 8h | 8h | 600 | 600 |
| 163 | 9.5 | Preparing API documentation | 4h | 2006-04-18 08:00 A | 2006-04-18 12:00 A | 156 | 100% |  |  |  |  | Lukasz; Mike | 6h | 6h | 450 | 450 |
| 164 | 9.6 | Preparing Software Manual | 10h | 2006-04-18 08:00 A | 2006-04-19 10:00 A | 156 | 100% |  |  |  |  | Dick; Rachel | 11h | 11h | 825 | 825 |

| ID | WBS | Task | Type | Duration | Start | Finish | Predecessors | Complete | Resources | Work | Actual work | Cost | Actual cost |
| --- | --- | --- | --- | --- | --- | --- | --- | --- | --- | --- | --- | --- | --- |
| 165 | 9.7 | **Final report** |  | 0.76d | 2006-04-18 08:00 A | 2006-04-18 15:05 A | 156 | 100% |  | 15.08h | 15.08h | 1,131.25 | 1,131.25 |
| 166 | 9.7.1 | Develop Section 1: Executive Summary |  | 2h | 2006-04-18 08:00 A | 2006-04-18 10:00 A |  | 100% | Rachel | 2h | 2h | 150 | 150 |
| 167 | 9.7.2 | Develop Section 2: Introduction |  | 2h | 2006-04-18 08:00 A | 2006-04-18 10:00 A |  | 100% | Rachel | 2h | 2h | 150 | 150 |
| 168 | 9.7.3 | Develop Section 3: Client Organization and Description |  | 1h | 2006-04-18 08:00 A | 2006-04-18 09:00 A |  | 100% | Dick | 1h | 1h | 75 | 75 |
| 169 | 9.7.4 | Develop Section 4: Project Team (Identify team member roles) |  | 1h | 2006-04-18 08:00 A | 2006-04-18 09:00 A |  | 100% | Dick | 1h | 1h | 75 | 75 |
| 170 | 9.7.5 | Develop Section 5: Problem Statement |  | 1h | 2006-04-18 08:00 A | 2006-04-18 09:00 A |  | 100% | Dick | 1h | 1h | 75 | 75 |
| 171 | 9.7.6 | Develop Section 6: Strategy and Outline for the Solution (Mini-Strategic Plan) |  | 1h | 2006-04-18 08:00 A | 2006-04-18 09:00 A |  | 100% | Lukasz | 1h | 1h | 75 | 75 |
| 172 | 9.7.7 | Develop Section 7: Analysis Methodology |  | 1h | 2006-04-18 08:00 A | 2006-04-18 09:00 A |  | 100% | Lukasz | 1h | 1h | 75 | 75 |
| 173 | 9.7.8 | Develop Section 8: IS/IT Design (Requirements, Code, Screenshots, Database) |  | 1h | 2006-04-18 08:00 A | 2006-04-18 09:00 A |  | 100% | Mike | 1h | 1h | 75 | 75 |
| 174 | 9.7.9 | Develop Section 9: Financial and Cost-Benefit Analysis | milestone | 0h | 2006-04-18 08:00 A | 2006-04-18 08:00 A |  | 100% | Mike |  |  |  |  |
| 175 | 9.7.10 | Develop Section 10: Project Management Plan/Schedule |  | 1h | 2006-04-18 08:00 A | 2006-04-18 09:00 A |  | 100% | Rachel | 1h | 1h | 75 | 75 |
| 176 | 9.7.11 | Develop Section 11: Post-Turnover Plan including Education, Training, Maintenance, and Support |  | 1h | 2006-04-18 08:00 A | 2006-04-18 09:00 A |  | 100% | Lukasz | 1h | 1h | 75 | 75 |
| 177 | 9.7.12 | Develop Section 12: Results | milestone | 0h | 2006-04-18 08:00 A | 2006-04-18 08:00 A |  | 100% | Mike |  |  |  |  |
| 178 | 9.7.13 | Develop Section 13: Summary and Conclusions |  | 2h | 2006-04-18 08:00 A | 2006-04-18 10:00 A |  | 100% | Rachel | 2h | 2h | 150 | 150 |
| 179 | 9.7.14 | Compile final report |  | 1h | 2006-04-18 10:00 A | 2006-04-18 11:00 A | 166, 167, 168, 169, 170, 171, 172, 173, 174, 175, 176, 177, 178 | 100% | Rachel | 1h | 1h | 75 | 75 |
| 180 | 9.7.15 | Submit final report |  | 5min | 2006-04-18 15:00 A | 2006-04-18 15:05 A | 179 | 100% | Rachel | 0.08h | 0.08h | 6.25 | 6.25 |
| 181 | 9.8 | Client Training |  | 3h | 2006-04-20 13:00 A | 2006-04-20 16:00 A | 164 | 100% | Rachel; Dick | 5h | 5h | 375 | 375 |
| 182 | 9.9 | Production Release 1.0 |  | 1h | 2006-04-21 15:00 A | 2006-04-21 16:00 A | 181 | 100% | Lukasz | 1h | 1h | 75 | 75 |
| 183 | 9.10 | Update project management plan/schedule |  | 1h | 2006-04-21 16:00 A | 2006-04-21 17:00 A | 182 | 100% | Rachel | 1h | 1h | 75 | 75 |
| 184 | 9.11 | **Project Presentation** |  | 5.25d | 2006-04-18 15:05 A | 2006-04-26 08:05 A | 165 | 100% |  | 24h | 24h | 1,800 | 1,800 |
| 185 | 9.11.1 | Preparation for final presentation |  | 0.25d | 2006-04-18 15:05 A | 2006-04-19 08:05 A |  | 100% | Dick; Lukasz; Mike; Rachel | 8h | 8h | 600 | 600 |
| 186 | 9.11.2 | Review final presentation |  | 0.25d | 2006-04-21 15:05 A | 2006-04-24 08:05 A | 185 | 100% | Dick; Lukasz; Mike; Rachel | 8h | 8h | 600 | 600 |
| 187 | 9.11.3 | Final presentation |  | 0.25d | 2006-04-25 15:05 A | 2006-04-26 08:05 A | 186 | 100% | Dick; Lukasz; Mike; Rachel | 8h | 8h | 600 | 600 |
