# ITEC-6800 - IT Capstone Project Plan

Schedule from MS Project, 2010-01-27 to 2010-05-05, status date 2010-05-05, costs in $, A marks actual dates.
HP

## Calendars

- Standard: Mon-Sun 08:00-12:00, 13:00-17:00.

## Resources

| Resource | Rate |
| --- | --- |
| Anand Patil | 150 |
| Gino Gervasio | 150 |
| Theodora Kampelou | 150 |
| Nathalie Neptune | 150 |
| James Wu | 150 |

## Schedule

| ID | WBS | Task | Type | Duration | Start | Finish | Predecessors | Complete | Baseline start | Baseline finish | Baseline duration | Constraint | Resources | Work | Actual work | Cost | Baseline cost | Actual cost |
| --- | --- | --- | --- | --- | --- | --- | --- | --- | --- | --- | --- | --- | --- | --- | --- | --- | --- | --- |
| 1 | 1 | **IT Capstone Project** |  | 98.12d | 2010-01-27 08:00 A | 2010-05-05 09:00 A |  | 100% | 2010-01-27 08:00 | 2010-05-05 09:00 | 98.12d |  |  | 401h | 401h | 60,149.83 | 52,649.92 | 60,149.83 |
| 2 | 1.1 | **Inception Phase** |  | 5.62d | 2010-01-27 08:00 A | 2010-02-01 13:57 A |  | 100% | 2010-01-27 08:00 | 2010-02-01 13:57 | 5.62d | start no earlier than 2010-01-27 08:00 |  | 26h | 26h | 3,900 | 3,900 | 3,900 |
| 3 | 1.1.1 | **Iteration-01** |  | 5.62d | 2010-01-27 08:00 A | 2010-02-01 13:57 A |  | 100% | 2010-01-27 08:00 | 2010-02-01 13:57 | 5.62d | start no earlier than 2010-01-27 08:00 |  | 26h | 26h | 3,900 | 3,900 | 3,900 |
| 4 | 1.1.1.1 | **Team Formation** |  | 0.17d | 2010-01-27 08:00 A | 2010-01-27 09:24 A |  | 100% | 2010-01-27 08:00 | 2010-01-27 09:24 | 0.17d |  |  | 3h | 3h | 450 | 450 | 450 |
| 5 | 1.1.1.1.1 | Identify Team Members |  | 0.12d | 2010-01-27 08:00 A | 2010-01-27 09:00 A |  | 100% | 2010-01-27 08:00 | 2010-01-27 09:00 | 0.12d |  | Anand Patil | 1h | 1h | 150 | 150 | 150 |
| 6 | 1.1.1.1.2 | Identify Team SkillSets |  | 0.03d | 2010-01-27 09:00 A | 2010-01-27 09:12 A | 5 | 100% | 2010-01-27 09:00 | 2010-01-27 09:12 | 0.03d |  | Anand Patil; Gino Gervasio; James Wu; Nathalie Neptune; Theodora Kampelou | 1h | 1h | 150 | 150 | 150 |
| 7 | 1.1.1.1.3 | Finalize Team and Roles |  | 0.03d | 2010-01-27 09:12 A | 2010-01-27 09:24 A | 6 | 100% | 2010-01-27 09:12 | 2010-01-27 09:24 | 0.03d |  | Anand Patil; Gino Gervasio; James Wu; Nathalie Neptune; Theodora Kampelou | 1h | 1h | 150 | 150 | 150 |
| 8 | 1.1.1.1.4 | Complete - Team Formation | milestone | 0d | 2010-01-27 09:24 A | 2010-01-27 09:24 A | 7 | 100% | 2010-01-27 09:24 | 2010-01-27 09:24 | 0d |  |  |  |  |  |  |  |
| 9 | 1.1.1.2 | **Client-Project Selection** |  | 3.12d | 2010-01-27 09:24 A | 2010-01-30 10:21 A |  | 100% | 2010-01-27 09:24 | 2010-01-30 10:21 | 3.12d |  |  | 9h | 9h | 1,350 | 1,350 | 1,350 |
| 10 | 1.1.1.2.1 | Research Clients and Projects |  | 3d | 2010-01-27 09:24 A | 2010-01-30 09:24 A | 8 | 100% | 2010-01-27 09:24 | 2010-01-30 09:24 | 3d |  | Anand Patil [6.7%]; Gino Gervasio [6.7%]; James Wu [6.7%]; Nathalie Neptune [6.7%]; Theodora Kampelou [6.7%] | 8h | 8h | 1,200 | 1,200 | 1,200 |
| 11 | 1.1.1.2.2 | Select Client/Project |  | 0.12d | 2010-01-30 09:24 A | 2010-01-30 10:21 A | 10 | 100% | 2010-01-30 09:24 | 2010-01-30 10:21 | 0.12d |  | Anand Patil [20.8%]; Gino Gervasio [20.8%]; James Wu [20.8%]; Nathalie Neptune [20.8%]; Theodora Kampelou [20.8%] | 1h | 1h | 150 | 150 | 150 |
| 12 | 1.1.1.2.3 | Complete - Client-Project Selection | milestone | 0d | 2010-01-30 10:21 A | 2010-01-30 10:21 A | 11 | 100% | 2010-01-30 10:21 | 2010-01-30 10:21 | 0d |  |  |  |  |  |  |  |
| 13 | 1.1.1.3 | **Project Prototype** |  | 2d | 2010-01-30 09:24 A | 2010-02-01 09:24 A |  | 100% | 2010-01-30 09:24 | 2010-02-01 09:24 | 2d |  |  | 8h | 8h | 1,200 | 1,200 | 1,200 |
| 14 | 1.1.1.3.1 | Prototype Design |  | 2d | 2010-01-30 09:24 A | 2010-02-01 09:24 A | 10 | 100% | 2010-01-30 09:24 | 2010-02-01 09:24 | 2d |  | Gino Gervasio [25%]; James Wu [25%] | 8h | 8h | 1,200 | 1,200 | 1,200 |
| 15 | 1.1.1.3.2 | Complete - Project Prototype | milestone | 0d | 2010-02-01 09:24 A | 2010-02-01 09:24 A | 14 | 100% | 2010-02-01 09:24 | 2010-02-01 09:24 | 0d |  |  |  |  |  |  |  |
| 16 | 1.1.1.4 | **Project Proposal** |  | 2.33d | 2010-01-30 10:21 A | 2010-02-01 13:57 A |  | 100% | 2010-01-30 10:21 | 2010-02-01 13:57 | 2.33d |  |  | 6h | 6h | 900 | 900 | 900 |
| 17 | 1.1.1.4.1 | Draft - Project Proposal |  | 2d | 2010-01-30 10:21 A | 2010-02-01 10:21 A | 12 | 100% | 2010-01-30 10:21 | 2010-02-01 10:21 | 2d |  | Anand Patil [3.8%]; Gino Gervasio [3.8%]; James Wu [3.8%]; Nathalie Neptune [3.8%]; Theodora Kampelou [3.8%] | 3h | 3h | 450 | 450 | 450 |
| 18 | 1.1.1.4.2 | Review - Project Proposal |  | 0.1d | 2010-02-01 10:21 A | 2010-02-01 11:09 A | 17 | 100% | 2010-02-01 10:21 | 2010-02-01 11:09 | 0.1d |  | Anand Patil [25%]; Gino Gervasio [25%]; James Wu [25%]; Nathalie Neptune [25%]; Theodora Kampelou [25%] | 1h | 1h | 150 | 150 | 150 |
| 19 | 1.1.1.4.3 | Revise - Project Proposal |  | 0.1d | 2010-02-01 11:09 A | 2010-02-01 11:57 A | 18 | 100% | 2010-02-01 11:09 | 2010-02-01 11:57 | 0.1d |  | Anand Patil [25%]; Gino Gervasio [25%]; James Wu [25%]; Nathalie Neptune [25%]; Theodora Kampelou [25%] | 1h | 1h | 150 | 150 | 150 |
| 20 | 1.1.1.4.4 | Submit - Project Proposal |  | 0.12d | 2010-02-01 11:57 A | 2010-02-01 13:57 A | 19 | 100% | 2010-02-01 11:57 | 2010-02-01 13:57 | 0.12d |  | Anand Patil | 1h | 1h | 150 | 150 | 150 |
| 21 | 1.1.1.4.5 | Complete - Project Proposal | milestone | 0d | 2010-02-01 13:57 A | 2010-02-01 13:57 A | 20 | 100% | 2010-02-01 13:57 | 2010-02-01 13:57 | 0d |  |  |  |  |  |  |  |
| 22 | 1.1.1.5 | Complete - Iteration-01 | milestone | 0d | 2010-02-01 13:57 A | 2010-02-01 13:57 A | 21, 8, 12, 15 | 100% | 2010-02-01 13:57 | 2010-02-01 13:57 | 0d |  |  |  |  |  |  |  |
| 23 | 1.1.2 | Complete - Inception Phase | milestone | 0d | 2010-02-01 13:57 A | 2010-02-01 13:57 A | 22 | 100% | 2010-02-01 13:57 | 2010-02-01 13:57 | 0d |  |  |  |  |  |  |  |
| 24 | 1.2 | **Elaboration Phase** |  | 14.81d | 2010-02-10 08:00 A | 2010-02-24 15:30 A |  | 100% | 2010-02-10 08:00 | 2010-02-24 15:30 | 14.81d | start no earlier than 2010-02-10 08:00 |  | 74h | 74h | 11,100 | 11,100 | 11,100 |
| 25 | 1.2.1 | **Iteration-02** |  | 14.81d | 2010-02-10 08:00 A | 2010-02-24 15:30 A |  | 100% | 2010-02-10 08:00 | 2010-02-24 15:30 | 14.81d | start no earlier than 2010-02-10 08:00 |  | 74h | 74h | 11,100 | 11,100 | 11,100 |
| 26 | 1.2.1.1 | **System Requirements** |  | 7.38d | 2010-02-10 08:00 A | 2010-02-17 11:00 A |  | 100% | 2010-02-10 08:00 | 2010-02-17 11:00 | 7.38d |  |  | 11h | 11h | 1,650 | 1,650 | 1,650 |
| 27 | 1.2.1.1.1 | Draft - System Requirments |  | 3d | 2010-02-10 08:00 A | 2010-02-12 17:00 A |  | 100% | 2010-02-10 08:00 | 2010-02-12 17:00 | 3d |  | Anand Patil [5%]; Gino Gervasio [5%]; James Wu [5%]; Nathalie Neptune [5%]; Theodora Kampelou [5%] | 6h | 6h | 900 | 900 | 900 |
| 28 | 1.2.1.1.2 | Client Review - System Requirments |  | 4d | 2010-02-13 08:00 A | 2010-02-16 17:00 A | 27 | 100% | 2010-02-13 08:00 | 2010-02-16 17:00 | 4d |  | Anand Patil [1.6%]; Gino Gervasio [1.6%] | 1h | 1h | 150 | 150 | 150 |
| 29 | 1.2.1.1.3 | Revise - System Requirments |  | 0.12d | 2010-02-17 08:00 A | 2010-02-17 09:00 A | 28 | 100% | 2010-02-17 08:00 | 2010-02-17 09:00 | 0.12d |  | Gino Gervasio [135.1%]; Anand Patil [64.9%] | 2h | 2h | 300 | 300 | 300 |
| 30 | 1.2.1.1.4 | Finalize - System Requirments |  | 0.12d | 2010-02-17 09:00 A | 2010-02-17 10:00 A | 29 | 100% | 2010-02-17 09:00 | 2010-02-17 10:00 | 0.12d |  | Gino Gervasio | 1h | 1h | 150 | 150 | 150 |
| 31 | 1.2.1.1.5 | Submit - System Requirments |  | 0.12d | 2010-02-17 10:00 A | 2010-02-17 11:00 A | 30 | 100% | 2010-02-17 10:00 | 2010-02-17 11:00 | 0.12d |  | Anand Patil | 1h | 1h | 150 | 150 | 150 |
| 32 | 1.2.1.1.6 | Complete - System Requirements | milestone | 0d | 2010-02-17 11:00 A | 2010-02-17 11:00 A | 31 | 100% | 2010-02-17 11:00 | 2010-02-17 11:00 | 0d |  |  |  |  |  |  |  |

| ID | WBS | Task | Type | Duration | Start | Finish | Predecessors | Complete | Baseline start | Baseline finish | Baseline duration | Resources | Work | Actual work | Cost | Baseline cost | Actual cost |
| --- | --- | --- | --- | --- | --- | --- | --- | --- | --- | --- | --- | --- | --- | --- | --- | --- | --- |
| 33 | 1.2.1.2 | **Project Mini-Strategic Plan** |  | 7.36d | 2010-02-10 08:00 A | 2010-02-17 10:52 A |  | 100% | 2010-02-10 08:00 | 2010-02-17 10:52 | 7.36d |  | 29h | 29h | 4,350 | 4,350 | 4,350 |
| 34 | 1.2.1.2.1 | **Analysis** |  | 3d | 2010-02-10 08:00 A | 2010-02-12 17:00 A |  | 100% | 2010-02-10 08:00 | 2010-02-12 17:00 | 3d |  | 15h | 15h | 2,250 | 2,250 | 2,250 |
| 35 | 1.2.1.2.1.1 | Complete External Analysis |  | 3d | 2010-02-10 08:00 A | 2010-02-12 17:00 A |  | 100% | 2010-02-10 08:00 | 2010-02-12 17:00 | 3d | Anand Patil [4.2%]; Gino Gervasio [4.2%]; James Wu [4.2%]; Nathalie Neptune [4.2%]; Theodora Kampelou [4.2%] | 5h | 5h | 750 | 750 | 750 |
| 36 | 1.2.1.2.1.2 | Complete Internal Analysis |  | 3d | 2010-02-10 08:00 A | 2010-02-12 17:00 A |  | 100% | 2010-02-10 08:00 | 2010-02-12 17:00 | 3d | Anand Patil [4.2%]; Gino Gervasio [4.2%]; James Wu [4.2%]; Nathalie Neptune [4.2%]; Theodora Kampelou [4.2%] | 5h | 5h | 750 | 750 | 750 |
| 37 | 1.2.1.2.1.3 | Complete Strategic Analysis |  | 3d | 2010-02-10 08:00 A | 2010-02-12 17:00 A |  | 100% | 2010-02-10 08:00 | 2010-02-12 17:00 | 3d | Anand Patil [4.2%]; Gino Gervasio [4.2%]; James Wu [4.2%]; Nathalie Neptune [4.2%]; Theodora Kampelou [4.2%] | 5h | 5h | 750 | 750 | 750 |
| 38 | 1.2.1.2.1.4 | Complete - Analysis | milestone | 0d | 2010-02-12 17:00 A | 2010-02-12 17:00 A | 35, 36, 37 | 100% | 2010-02-12 17:00 | 2010-02-12 17:00 | 0d |  |  |  |  |  |  |
| 39 | 1.2.1.2.2 | **Project Mini-Strategic Plan - Deliverable** |  | 4.36d | 2010-02-13 08:00 A | 2010-02-17 10:52 A |  | 100% | 2010-02-13 08:00 | 2010-02-17 10:52 | 4.36d |  | 14h | 14h | 2,100 | 2,100 | 2,100 |
| 40 | 1.2.1.2.2.1 | Draft - Project Mini-Strategic Plan |  | 3d | 2010-02-13 08:00 A | 2010-02-15 17:00 A | 38 | 100% | 2010-02-13 08:00 | 2010-02-15 17:00 | 3d | Anand Patil [6.7%]; Gino Gervasio [6.7%]; James Wu [8.3%]; Nathalie Neptune [12.5%]; Theodora Kampelou [8.3%] | 8h | 8h | 1,200 | 1,200 | 1,200 |
| 41 | 1.2.1.2.2.2 | Review - Project Mini-Strategic Plan |  | 1d | 2010-02-16 08:00 A | 2010-02-16 17:00 A | 40 | 100% | 2010-02-16 08:00 | 2010-02-16 17:00 | 1d | Anand Patil [5%]; Gino Gervasio [5%]; James Wu [5%]; Nathalie Neptune [5%]; Theodora Kampelou [5%] | 2h | 2h | 300 | 300 | 300 |
| 42 | 1.2.1.2.2.3 | Revise - Project Mini-Strategic Plan |  | 0.12d | 2010-02-17 08:00 A | 2010-02-17 08:57 A | 41 | 100% | 2010-02-17 08:00 | 2010-02-17 08:57 | 0.12d | Nathalie Neptune [104.2%]; Theodora Kampelou [104.2%] | 2h | 2h | 300 | 300 | 300 |
| 43 | 1.2.1.2.2.4 | Finalize - Project Mini-Strategic Plan |  | 0.12d | 2010-02-17 08:57 A | 2010-02-17 09:55 A | 42 | 100% | 2010-02-17 08:57 | 2010-02-17 09:55 | 0.12d | Nathalie Neptune [52.1%]; Theodora Kampelou [52.1%] | 1h | 1h | 150 | 150 | 150 |
| 44 | 1.2.1.2.2.5 | Submit - Project Mini-Strategic Plan |  | 0.12d | 2010-02-17 09:55 A | 2010-02-17 10:52 A | 43 | 100% | 2010-02-17 09:55 | 2010-02-17 10:52 | 0.12d | Anand Patil [104.2%] | 1h | 1h | 150 | 150 | 150 |
| 45 | 1.2.1.2.2.6 | Complete - Project Mini-Strategic Plan - Deliverable | milestone | 0d | 2010-02-17 10:52 A | 2010-02-17 10:52 A | 44 | 100% | 2010-02-17 10:52 | 2010-02-17 10:52 | 0d |  |  |  |  |  |  |
| 46 | 1.2.1.2.3 | Complete - Project Mini-Strategic Plan | milestone | 0d | 2010-02-17 10:52 A | 2010-02-17 10:52 A | 45 | 100% | 2010-02-17 10:52 | 2010-02-17 10:52 | 0d |  |  |  |  |  |  |
| 47 | 1.2.1.3 | **Cost-Benefit Analysis** |  | 7.44d | 2010-02-17 11:00 A | 2010-02-24 15:30 A |  | 100% | 2010-02-17 11:00 | 2010-02-24 15:30 | 7.44d |  | 21h | 21h | 3,150 | 3,150 | 3,150 |
| 48 | 1.2.1.3.1 | **Analysis** |  | 3d | 2010-02-17 11:00 A | 2010-02-20 11:00 A |  | 100% | 2010-02-17 11:00 | 2010-02-20 11:00 | 3d |  | 8h | 8h | 1,200 | 1,200 | 1,200 |
| 49 | 1.2.1.3.1.1 | Complete Cost-Benefit Analysis |  | 3d | 2010-02-17 11:00 A | 2010-02-20 11:00 A | 32, 46 | 100% | 2010-02-17 11:00 | 2010-02-20 11:00 | 3d | Anand Patil [6.7%]; Gino Gervasio [6.7%]; James Wu [6.7%]; Nathalie Neptune [6.7%]; Theodora Kampelou [6.7%] | 8h | 8h | 1,200 | 1,200 | 1,200 |
| 50 | 1.2.1.3.1.2 | Complete - Analysis | milestone | 0d | 2010-02-20 11:00 A | 2010-02-20 11:00 A | 49 | 100% | 2010-02-20 11:00 | 2010-02-20 11:00 | 0d |  |  |  |  |  |  |
| 51 | 1.2.1.3.2 | **Cost-Benefit Analysis - Deliverable** |  | 4.44d | 2010-02-20 11:00 A | 2010-02-24 15:30 A |  | 100% | 2010-02-20 11:00 | 2010-02-24 15:30 | 4.44d |  | 13h | 13h | 1,950 | 1,950 | 1,950 |
| 52 | 1.2.1.3.2.1 | Draft - Cost-Benefit Analysis |  | 4d | 2010-02-20 11:00 A | 2010-02-24 11:00 A | 50 | 100% | 2010-02-20 11:00 | 2010-02-24 11:00 | 4d | Anand Patil [3.8%]; Gino Gervasio [3.8%]; James Wu [3.8%]; Nathalie Neptune [3.8%]; Theodora Kampelou [3.8%] | 6h | 6h | 900 | 900 | 900 |
| 53 | 1.2.1.3.2.2 | Review - Cost-Benefit Analysis |  | 0.12d | 2010-02-24 11:00 A | 2010-02-24 12:00 A | 52 | 100% | 2010-02-24 11:00 | 2010-02-24 12:00 | 0.12d | Anand Patil [150%]; Gino Gervasio [150%] | 3h | 3h | 450 | 450 | 450 |
| 54 | 1.2.1.3.2.3 | Revise - Cost-Benefit Analysis |  | 0.12d | 2010-02-24 13:00 A | 2010-02-24 14:00 A | 53 | 100% | 2010-02-24 13:00 | 2010-02-24 14:00 | 0.12d | Anand Patil; Gino Gervasio | 2h | 2h | 300 | 300 | 300 |
| 55 | 1.2.1.3.2.4 | Finalize - Cost-Benefit Analysis |  | 0.06d | 2010-02-24 14:00 A | 2010-02-24 14:30 A | 54 | 100% | 2010-02-24 14:00 | 2010-02-24 14:30 | 0.06d | Anand Patil; Gino Gervasio | 1h | 1h | 150 | 150 | 150 |
| 56 | 1.2.1.3.2.5 | Submit - Cost-Benefit Analysis |  | 0.12d | 2010-02-24 14:30 A | 2010-02-24 15:30 A | 55 | 100% | 2010-02-24 14:30 | 2010-02-24 15:30 | 0.12d | Anand Patil | 1h | 1h | 150 | 150 | 150 |
| 57 | 1.2.1.3.2.6 | Complete - Cost-Benefit Analysis - Deliverable | milestone | 0d | 2010-02-24 15:30 A | 2010-02-24 15:30 A | 56 | 100% | 2010-02-24 15:30 | 2010-02-24 15:30 | 0d |  |  |  |  |  |  |
| 58 | 1.2.1.3.3 | Complete - Cost-Benefit Analysis | milestone | 0d | 2010-02-24 15:30 A | 2010-02-24 15:30 A | 57 | 100% | 2010-02-24 15:30 | 2010-02-24 15:30 | 0d |  |  |  |  |  |  |

| ID | WBS | Task | Type | Duration | Start | Finish | Predecessors | Complete | Baseline start | Baseline finish | Baseline duration | Constraint | Resources | Work | Actual work | Cost | Baseline cost | Actual cost |
| --- | --- | --- | --- | --- | --- | --- | --- | --- | --- | --- | --- | --- | --- | --- | --- | --- | --- | --- |
| 59 | 1.2.1.4 | **MS Project Plan** |  | 5.38d | 2010-02-16 08:00 A | 2010-02-21 11:00 A |  | 100% | 2010-02-16 08:00 | 2010-02-21 11:00 | 5.38d |  |  | 13h | 13h | 1,950 | 1,950 | 1,950 |
| 60 | 1.2.1.4.1 | Create Plan - Set Defaults |  | 0.12d | 2010-02-16 08:00 A | 2010-02-16 09:00 A | 40 | 100% | 2010-02-16 08:00 | 2010-02-16 09:00 | 0.12d |  | Anand Patil | 1h | 1h | 150 | 150 | 150 |
| 61 | 1.2.1.4.2 | Define Project Tasks |  | 1d | 2010-02-16 09:00 A | 2010-02-17 09:00 A | 60 | 100% | 2010-02-16 09:00 | 2010-02-17 09:00 | 1d |  | Anand Patil [50%] | 4h | 4h | 600 | 600 | 600 |
| 62 | 1.2.1.4.3 | Define Project Resources |  | 0.5d | 2010-02-17 09:00 A | 2010-02-17 14:00 A | 61 | 100% | 2010-02-17 09:00 | 2010-02-17 14:00 | 0.5d |  | Anand Patil [25%] | 1h | 1h | 150 | 150 | 150 |
| 63 | 1.2.1.4.4 | Define Deadlines |  | 0.5d | 2010-02-17 14:00 A | 2010-02-18 09:00 A | 62 | 100% | 2010-02-17 14:00 | 2010-02-18 09:00 | 0.5d |  | Anand Patil [25%] | 1h | 1h | 150 | 150 | 150 |
| 64 | 1.2.1.4.5 | Review - MS Project Plan |  | 2d | 2010-02-18 09:00 A | 2010-02-20 09:00 A | 63 | 100% | 2010-02-18 09:00 | 2010-02-20 09:00 | 2d |  | Anand Patil [2.5%]; Gino Gervasio [2.5%]; James Wu [2.5%]; Nathalie Neptune [2.5%]; Theodora Kampelou [2.5%] | 2h | 2h | 300 | 300 | 300 |
| 65 | 1.2.1.4.6 | Revise - MS Project Plan |  | 1d | 2010-02-20 09:00 A | 2010-02-21 09:00 A | 64 | 100% | 2010-02-20 09:00 | 2010-02-21 09:00 | 1d |  | Anand Patil [25%] | 2h | 2h | 300 | 300 | 300 |
| 66 | 1.2.1.4.7 | Finalize - MS Project Plan |  | 0.12d | 2010-02-21 09:00 A | 2010-02-21 10:00 A | 65 | 100% | 2010-02-21 09:00 | 2010-02-21 10:00 | 0.12d |  | Anand Patil | 1h | 1h | 150 | 150 | 150 |
| 67 | 1.2.1.4.8 | Submit - MS Project Plan |  | 0.12d | 2010-02-21 10:00 A | 2010-02-21 11:00 A | 66 | 100% | 2010-02-21 10:00 | 2010-02-21 11:00 | 0.12d |  | Anand Patil | 1h | 1h | 150 | 150 | 150 |
| 68 | 1.2.1.4.9 | Complete - MS Project Plan | milestone | 0d | 2010-02-21 11:00 A | 2010-02-21 11:00 A | 67 | 100% | 2010-02-21 11:00 | 2010-02-21 11:00 | 0d |  |  |  |  |  |  |  |
| 69 | 1.2.1.5 | Complete - Iteration-02 | milestone | 0d | 2010-02-24 15:30 A | 2010-02-24 15:30 A | 32, 46, 58, 68 | 100% | 2010-02-24 15:30 | 2010-02-24 15:30 | 0d |  |  |  |  |  |  |  |
| 70 | 1.2.2 | Complete - Elaboration Phase | milestone | 0d | 2010-02-10 08:00 A | 2010-02-10 08:00 A | 23 | 100% | 2010-02-10 08:00 | 2010-02-10 08:00 | 0d |  |  |  |  |  |  |  |
| 71 | 1.3 | **Construction Phase** |  | 51.25d | 2010-02-24 08:00 A | 2010-04-16 10:00 A |  | 100% | 2010-02-24 08:00 | 2010-04-07 11:57 | 42.49d | start no earlier than 2010-02-24 08:00 |  | 236h | 236h | 35,399.83 | 27,899.92 | 35,399.83 |
| 72 | 1.3.1 | **Iteration-03** |  | 17.38d | 2010-02-24 08:00 A | 2010-03-13 11:01 A |  | 100% | 2010-02-24 08:00 | 2010-03-13 11:01 | 17.38d | start no earlier than 2010-02-24 08:00 |  | 52h | 52h | 7,799.92 | 7,050 | 7,799.92 |
| 73 | 1.3.1.1 | **Database Design Document** |  | 8d | 2010-02-24 08:00 A | 2010-03-03 17:00 A |  | 100% | 2010-02-24 08:00 | 2010-03-03 17:00 | 8d |  |  | 16h | 16h | 2,400 | 2,400 | 2,400 |
| 74 | 1.3.1.1.1 | Draft - Database Design Document |  | 5d | 2010-02-24 08:00 A | 2010-02-28 17:00 A |  | 100% | 2010-02-24 08:00 | 2010-02-28 17:00 | 5d |  | Theodora Kampelou [5%]; Nathalie Neptune [20%] | 10h | 10h | 1,500 | 1,500 | 1,500 |
| 75 | 1.3.1.1.2 | Review - Database Design Document |  | 1d | 2010-03-01 08:00 A | 2010-03-01 17:00 A | 74 | 100% | 2010-03-01 08:00 | 2010-03-01 17:00 | 1d |  | Anand Patil [7.5%]; Gino Gervasio [7.5%]; James Wu [7.5%]; Nathalie Neptune [7.5%]; Theodora Kampelou [7.5%] | 3h | 3h | 450 | 450 | 450 |
| 76 | 1.3.1.1.3 | Revise - Database Design Document |  | 2d | 2010-03-02 08:00 A | 2010-03-03 17:00 A | 75 | 100% | 2010-03-02 08:00 | 2010-03-03 17:00 | 2d |  | Theodora Kampelou [9.4%]; Nathalie Neptune [20%] | 3h | 3h | 450 | 450 | 450 |
| 77 | 1.3.1.1.4 | Complete - Database Design Document | milestone | 0d | 2010-03-03 17:00 A | 2010-03-03 17:00 A | 76 | 100% | 2010-03-03 17:00 | 2010-03-03 17:00 | 0d |  |  |  |  |  |  |  |
| 78 | 1.3.1.2 | **Construction** |  | 17.38d | 2010-02-24 08:00 A | 2010-03-13 11:01 A |  | 100% | 2010-02-24 08:00 | 2010-03-13 11:01 | 17.38d |  |  | 36h | 36h | 5,399.92 | 4,650 | 5,399.92 |
| 79 | 1.3.1.2.1 | Modeling/Requirements |  | 1d | 2010-02-24 08:00 A | 2010-02-24 17:00 A |  | 100% | 2010-02-24 08:00 | 2010-02-24 17:00 | 1d |  | Anand Patil [5%]; Gino Gervasio [5%]; James Wu [5%]; Nathalie Neptune [5%]; Theodora Kampelou [5%] | 2h | 2h | 300 | 300 | 300 |
| 80 | 1.3.1.2.2 | Analysis & Design |  | 1d | 2010-02-25 08:00 A | 2010-02-25 17:00 A | 79 | 100% | 2010-02-25 08:00 | 2010-02-25 17:00 | 1d |  | Gino Gervasio [31.2%]; James Wu [31.2%] | 5h | 5h | 750 | 750 | 750 |
| 81 | 1.3.1.2.3 | **Implementation** |  | 15d | 2010-02-26 08:00 A | 2010-03-12 17:00 A |  | 100% | 2010-02-26 08:00 | 2010-03-12 17:00 | 15d |  |  | 17h | 17h | 2,549.92 | 1,800 | 2,549.92 |
| 82 | 1.3.1.2.3.1 | **Code and Unit Test** |  | 6d | 2010-02-26 08:00 A | 2010-03-03 17:00 A |  | 100% | 2010-02-26 08:00 | 2010-03-03 17:00 | 6d |  |  | 8h | 8h | 1,200 | 1,200 | 1,200 |
| 83 | 1.3.1.2.3.1.1 | Code |  | 4d | 2010-02-26 08:00 A | 2010-03-01 17:00 A | 80 | 100% | 2010-02-26 08:00 | 2010-03-01 17:00 | 4d |  | Gino Gervasio [1.1%]; James Wu [1.1%]; Theodora Kampelou [13.5%] | 5h | 5h | 750 | 750 | 750 |
| 84 | 1.3.1.2.3.1.2 | Unit Test |  | 2d | 2010-03-02 08:00 A | 2010-03-03 17:00 A | 83 | 100% | 2010-03-02 08:00 | 2010-03-03 17:00 | 2d |  | Gino Gervasio [1.5%]; James Wu [1.5%]; Theodora Kampelou | 3h | 3h | 450 | 450 | 450 |
| 85 | 1.3.1.2.3.1.3 | Complete - Code and Unit Test | milestone | 0d | 2010-03-03 17:00 A | 2010-03-03 17:00 A | 84 | 100% | 2010-03-03 17:00 | 2010-03-03 17:00 | 0d |  |  |  |  |  |  |  |

| ID | WBS | Task | Type | Duration | Start | Finish | Predecessors | Complete | Baseline start | Baseline finish | Baseline duration | Constraint | Resources | Work | Actual work | Cost | Baseline cost | Actual cost |
| --- | --- | --- | --- | --- | --- | --- | --- | --- | --- | --- | --- | --- | --- | --- | --- | --- | --- | --- |
| 86 | 1.3.1.2.3.2 | **System Test Bug Fixes** |  | 9d | 2010-03-04 08:00 A | 2010-03-12 17:00 A |  | 100% | 2010-03-04 08:00 | 2010-03-12 17:00 | 9d |  |  | 9h | 9h | 1,349.92 | 600 | 1,349.92 |
| 87 | 1.3.1.2.3.2.1 | Code |  | 8d | 2010-03-04 08:00 A | 2010-03-11 17:00 A | 85 | 100% | 2010-03-04 08:00 | 2010-03-11 17:00 | 8d |  | Gino Gervasio [1%]; James Wu [1%]; Theodora Kampelou | 8h | 8h | 1,200 | 1,200 | 1,200 |
| 88 | 1.3.1.2.3.2.2 | Unit Test |  | 1d | 2010-03-12 08:00 A | 2010-03-12 17:00 A | 87 | 100% | 2010-03-12 08:00 | 2010-03-12 17:00 | 1d |  | Gino Gervasio [8%]; James Wu [8%]; Theodora Kampelou [11.1%] | 1h | 1h | 149.92 | 149.92 | 149.92 |
| 89 | 1.3.1.2.3.2.3 | Complete - System Test Bug Fixes | milestone | 0d | 2010-03-12 17:00 A | 2010-03-12 17:00 A | 88 | 100% | 2010-03-12 17:00 | 2010-03-12 17:00 | 0d |  |  |  |  |  |  |  |
| 90 | 1.3.1.2.3.3 | Complete - Implementation | milestone | 0d | 2010-03-12 17:00 A | 2010-03-12 17:00 A | 89 | 100% | 2010-03-12 17:00 | 2010-03-12 17:00 | 0d |  |  |  |  |  |  |  |
| 91 | 1.3.1.2.4 | **System Testing** |  | 15.26d | 2010-02-26 08:00 A | 2010-03-13 10:04 A |  | 100% | 2010-02-26 08:00 | 2010-03-13 10:04 | 15.26d |  |  | 11h | 11h | 1,650 | 1,650 | 1,650 |
| 92 | 1.3.1.2.4.1 | **System Requirments - Test Cases** |  | 3.37d | 2010-02-26 08:00 A | 2010-03-01 10:57 A |  | 100% | 2010-02-26 08:00 | 2010-03-01 10:57 | 3.37d |  |  | 8h | 8h | 1,200 | 1,200 | 1,200 |
| 93 | 1.3.1.2.4.1.1 | Draft - System Requirments - Test Cases |  | 3d | 2010-02-26 08:00 A | 2010-02-28 17:00 A | 80 | 100% | 2010-02-26 08:00 | 2010-02-28 17:00 | 3d |  | Anand Patil [20.8%] | 5h | 5h | 750 | 750 | 750 |
| 94 | 1.3.1.2.4.1.2 | Review - System Requirments - Test Cases |  | 0.12d | 2010-03-01 08:00 A | 2010-03-01 08:57 A | 93 | 100% | 2010-03-01 08:00 | 2010-03-01 08:57 | 0.12d |  | Anand Patil [20.8%]; Gino Gervasio [20.8%]; James Wu [20.8%]; Nathalie Neptune [20.8%]; Theodora Kampelou [20.8%] | 1h | 1h | 150 | 150 | 150 |
| 95 | 1.3.1.2.4.1.3 | Revise - System Requirments - Test Cases |  | 0.12d | 2010-03-01 08:57 A | 2010-03-01 09:57 A | 94 | 100% | 2010-03-01 08:57 | 2010-03-01 09:57 | 0.12d |  | Anand Patil | 1h | 1h | 150 | 150 | 150 |
| 96 | 1.3.1.2.4.1.4 | Finalize - System Requirments - Test Cases |  | 0.12d | 2010-03-01 09:57 A | 2010-03-01 10:57 A | 95 | 100% | 2010-03-01 09:57 | 2010-03-01 10:57 | 0.12d |  | Anand Patil | 1h | 1h | 150 | 150 | 150 |
| 97 | 1.3.1.2.4.1.5 | Complete - System Requirments - Test Cases | milestone | 0d | 2010-03-01 10:57 A | 2010-03-01 10:57 A | 96 | 100% | 2010-03-01 10:57 | 2010-03-01 10:57 | 0d |  |  |  |  |  |  |  |
| 98 | 1.3.1.2.4.2 | **System Requirments - Test Cases - Execution** |  | 0.26d | 2010-03-13 08:00 A | 2010-03-13 10:04 A |  | 100% | 2010-03-13 08:00 | 2010-03-13 10:04 | 0.26d |  |  | 3h | 3h | 450 | 450 | 450 |
| 99 | 1.3.1.2.4.2.1 | Execution - System Requirements - Test Cases |  | 0.13d | 2010-03-13 08:00 A | 2010-03-13 09:02 A | 97, 90 | 100% | 2010-03-13 08:00 | 2010-03-13 09:02 | 0.13d |  | Gino Gervasio [96.2%]; James Wu [96.2%] | 2h | 2h | 300 | 300 | 300 |
| 100 | 1.3.1.2.4.2.2 | Result Statistics - System Requirments - Test Cases |  | 0.13d | 2010-03-13 09:02 A | 2010-03-13 10:04 A | 99 | 100% | 2010-03-13 09:02 | 2010-03-13 10:04 | 0.13d |  | Gino Gervasio [48.1%]; James Wu [48.1%] | 1h | 1h | 150 | 150 | 150 |
| 101 | 1.3.1.2.4.2.3 | Complete - System Requirments - Test Cases - Execution | milestone | 0d | 2010-03-13 10:04 A | 2010-03-13 10:04 A | 100 | 100% | 2010-03-13 10:04 | 2010-03-13 10:04 | 0d |  |  |  |  |  |  |  |
| 102 | 1.3.1.2.4.3 | Complete - System Testing | milestone | 0d | 2010-03-13 10:04 A | 2010-03-13 10:04 A | 101 | 100% | 2010-03-13 10:04 | 2010-03-13 10:04 | 0d |  |  |  |  |  |  |  |
| 103 | 1.3.1.2.5 | Evaluation |  | 0.12d | 2010-03-13 10:04 A | 2010-03-13 11:01 A | 102 | 100% | 2010-03-13 10:04 | 2010-03-13 11:01 | 0.12d |  | Anand Patil [21%]; Gino Gervasio [21%]; James Wu [21%]; Nathalie Neptune [21%]; Theodora Kampelou [21%] | 1h | 1h | 150 | 150 | 150 |
| 104 | 1.3.1.2.6 | Complete - Construction | milestone | 0d | 2010-03-13 11:01 A | 2010-03-13 11:01 A | 103 | 100% | 2010-03-13 11:01 | 2010-03-13 11:01 | 0d |  |  |  |  |  |  |  |
| 105 | 1.3.1.3 | Complete - Iteration-03 | milestone | 0d | 2010-03-13 11:01 A | 2010-03-13 11:01 A | 77, 104 | 100% | 2010-03-13 11:01 | 2010-03-13 11:01 | 0d |  |  |  |  |  |  |  |
| 106 | 1.3.2 | **Iteration-04** |  | 14.49d | 2010-03-10 08:00 A | 2010-03-24 11:57 A |  | 100% | 2010-03-10 08:00 | 2010-03-24 11:57 | 14.49d | start no earlier than 2010-03-10 08:00 |  | 72h | 72h | 10,799.92 | 10,049.92 | 10,799.92 |
| 107 | 1.3.2.1 | **Database Design Document** |  | 6.25d | 2010-03-10 08:00 A | 2010-03-16 10:00 A |  | 100% | 2010-03-10 08:00 | 2010-03-16 10:00 | 6.25d |  |  | 13h | 13h | 1,950 | 1,950 | 1,950 |
| 108 | 1.3.2.1.1 | Draft - Database Design Document |  | 3d | 2010-03-10 08:00 A | 2010-03-12 17:00 A |  | 100% | 2010-03-10 08:00 | 2010-03-12 17:00 | 3d |  | Theodora Kampelou [10.4%]; Nathalie Neptune [20%] | 5h | 5h | 750 | 750 | 750 |
| 109 | 1.3.2.1.2 | Review - Database Design Document |  | 1d | 2010-03-13 08:00 A | 2010-03-13 17:00 A | 108 | 100% | 2010-03-13 08:00 | 2010-03-13 17:00 | 1d |  | Anand Patil [7.5%]; Gino Gervasio [7.5%]; James Wu [7.5%]; Nathalie Neptune [7.5%]; Theodora Kampelou [7.5%] | 3h | 3h | 450 | 450 | 450 |
| 110 | 1.3.2.1.3 | Revise - Database Design Document |  | 2d | 2010-03-14 08:00 A | 2010-03-15 17:00 A | 109 | 100% | 2010-03-14 08:00 | 2010-03-15 17:00 | 2d |  | Theodora Kampelou [9.4%]; Nathalie Neptune [20%] | 3h | 3h | 450 | 450 | 450 |
| 111 | 1.3.2.1.4 | Finalize - Database Design Document |  | 0.12d | 2010-03-16 08:00 A | 2010-03-16 09:00 A | 110 | 100% | 2010-03-16 08:00 | 2010-03-16 09:00 | 0.12d |  | Nathalie Neptune | 1h | 1h | 150 | 150 | 150 |
| 112 | 1.3.2.1.5 | Submit - Database Design Document |  | 0.12d | 2010-03-16 09:00 A | 2010-03-16 10:00 A | 111 | 100% | 2010-03-16 09:00 | 2010-03-16 10:00 | 0.12d |  | Anand Patil | 1h | 1h | 150 | 150 | 150 |
| 113 | 1.3.2.1.6 | Complete - Database Design Document | milestone | 0d | 2010-03-16 10:00 A | 2010-03-16 10:00 A | 112 | 100% | 2010-03-16 10:00 | 2010-03-16 10:00 | 0d |  |  |  |  |  |  |  |

| ID | WBS | Task | Type | Duration | Start | Finish | Predecessors | Complete | Baseline start | Baseline finish | Baseline duration | Resources | Work | Actual work | Cost | Baseline cost | Actual cost |
| --- | --- | --- | --- | --- | --- | --- | --- | --- | --- | --- | --- | --- | --- | --- | --- | --- | --- |
| 114 | 1.3.2.2 | **Software Design Document** |  | 8.26d | 2010-03-10 08:00 A | 2010-03-18 10:02 A |  | 100% | 2010-03-10 08:00 | 2010-03-18 10:02 | 8.26d |  | 18h | 18h | 2,700 | 2,700 | 2,700 |
| 115 | 1.3.2.2.1 | Draft - Software Design Document |  | 5d | 2010-03-10 08:00 A | 2010-03-14 17:00 A |  | 100% | 2010-03-10 08:00 | 2010-03-14 17:00 | 5d | Gino Gervasio [8.3%]; Nathalie Neptune [8.3%]; Anand Patil [8.3%] | 10h | 10h | 1,500 | 1,500 | 1,500 |
| 116 | 1.3.2.2.2 | Review - Software Design Document |  | 1d | 2010-03-15 08:00 A | 2010-03-15 17:00 A | 115 | 100% | 2010-03-15 08:00 | 2010-03-15 17:00 | 1d | Anand Patil [7.5%]; Gino Gervasio [7.5%]; James Wu [7.5%]; Nathalie Neptune [7.5%]; Theodora Kampelou [7.5%] | 3h | 3h | 450 | 450 | 450 |
| 117 | 1.3.2.2.3 | Revise - Software Design Document |  | 2d | 2010-03-16 08:00 A | 2010-03-17 17:00 A | 116 | 100% | 2010-03-16 08:00 | 2010-03-17 17:00 | 2d | Gino Gervasio [6.2%]; Nathalie Neptune [6.2%]; Anand Patil [6.2%] | 3h | 3h | 450 | 450 | 450 |
| 118 | 1.3.2.2.4 | Finalize - Software Design Document |  | 0.13d | 2010-03-18 08:00 A | 2010-03-18 09:02 A | 117 | 100% | 2010-03-18 08:00 | 2010-03-18 09:02 | 0.13d | Gino Gervasio [32.1%]; Nathalie Neptune [32.1%]; Anand Patil [32.1%] | 1h | 1h | 150 | 150 | 150 |
| 119 | 1.3.2.2.5 | Submit - Software Design Document |  | 0.12d | 2010-03-18 09:02 A | 2010-03-18 10:02 A | 118 | 100% | 2010-03-18 09:02 | 2010-03-18 10:02 | 0.12d | Anand Patil | 1h | 1h | 150 | 150 | 150 |
| 120 | 1.3.2.2.6 | Complete - Software Design Document | milestone | 0d | 2010-03-18 10:02 A | 2010-03-18 10:02 A | 119 | 100% | 2010-03-18 10:02 | 2010-03-18 10:02 | 0d |  |  |  |  |  |  |
| 121 | 1.3.2.3 | **Construction** |  | 14.49d | 2010-03-10 08:00 A | 2010-03-24 11:57 A |  | 100% | 2010-03-10 08:00 | 2010-03-24 11:57 | 14.49d |  | 41h | 41h | 6,149.92 | 5,399.92 | 6,149.92 |
| 122 | 1.3.2.3.1 | Modeling/Requirements |  | 1d | 2010-03-10 08:00 A | 2010-03-10 17:00 A |  | 100% | 2010-03-10 08:00 | 2010-03-10 17:00 | 1d | Anand Patil [5%]; Gino Gervasio [5%]; James Wu [5%]; Nathalie Neptune [5%]; Theodora Kampelou [5%] | 2h | 2h | 300 | 300 | 300 |
| 123 | 1.3.2.3.2 | Analysis & Design |  | 2d | 2010-03-11 08:00 A | 2010-03-12 17:00 A | 122 | 100% | 2010-03-11 08:00 | 2010-03-11 17:00 | 1d | Gino Gervasio [31.2%]; James Wu [31.2%] | 10h | 10h | 1,500 | 750 | 1,500 |
| 124 | 1.3.2.3.3 | **Implementation** |  | 12d | 2010-03-12 08:00 A | 2010-03-23 17:00 A |  | 100% | 2010-03-12 08:00 | 2010-03-23 17:00 | 12d |  | 17h | 17h | 2,549.92 | 2,549.92 | 2,549.92 |
| 125 | 1.3.2.3.3.1 | **Code and Unit Test** |  | 6d | 2010-03-12 08:00 A | 2010-03-17 17:00 A |  | 100% | 2010-03-12 08:00 | 2010-03-17 17:00 | 6d |  | 8h | 8h | 1,200 | 1,200 | 1,200 |
| 126 | 1.3.2.3.3.1.1 | Code |  | 4d | 2010-03-12 08:00 A | 2010-03-15 17:00 A | 123 | 100% | 2010-03-12 08:00 | 2010-03-15 17:00 | 4d | Gino Gervasio [1.1%]; James Wu [1.1%]; Theodora Kampelou [13.5%] | 5h | 5h | 750 | 750 | 750 |
| 127 | 1.3.2.3.3.1.2 | Unit Test |  | 2d | 2010-03-16 08:00 A | 2010-03-17 17:00 A | 126 | 100% | 2010-03-16 08:00 | 2010-03-17 17:00 | 2d | Gino Gervasio [3.1%]; James Wu [6.2%]; Theodora Kampelou | 3h | 3h | 450 | 450 | 450 |
| 128 | 1.3.2.3.3.1.3 | Complete - Code and Unit Test | milestone | 0d | 2010-03-17 17:00 A | 2010-03-17 17:00 A | 127 | 100% | 2010-03-17 17:00 | 2010-03-17 17:00 | 0d |  |  |  |  |  |  |
| 129 | 1.3.2.3.3.2 | **System Test Bug Fixes** |  | 6d | 2010-03-18 08:00 A | 2010-03-23 17:00 A |  | 100% | 2010-03-18 08:00 | 2010-03-23 17:00 | 6d |  | 9h | 9h | 1,349.92 | 1,349.92 | 1,349.92 |
| 130 | 1.3.2.3.3.2.1 | Code |  | 5d | 2010-03-18 08:00 A | 2010-03-22 17:00 A | 128 | 100% | 2010-03-18 08:00 | 2010-03-22 17:00 | 5d | Gino Gervasio [1.7%]; James Wu [1.7%]; Theodora Kampelou | 8h | 8h | 1,200 | 1,200 | 1,200 |
| 131 | 1.3.2.3.3.2.2 | Unit Test |  | 1d | 2010-03-23 08:00 A | 2010-03-23 17:00 A | 130 | 100% | 2010-03-23 08:00 | 2010-03-23 17:00 | 1d | Gino Gervasio [8%]; James Wu [8%]; Theodora Kampelou [11.1%] | 1h | 1h | 149.92 | 149.92 | 149.92 |
| 132 | 1.3.2.3.3.2.3 | Complete - System Test Bug Fixes | milestone | 0d | 2010-03-23 17:00 A | 2010-03-23 17:00 A | 131 | 100% | 2010-03-23 17:00 | 2010-03-23 17:00 | 0d |  |  |  |  |  |  |
| 133 | 1.3.2.3.3.3 | Complete - Implementation | milestone | 0d | 2010-03-23 17:00 A | 2010-03-23 17:00 A | 132 | 100% | 2010-03-23 17:00 | 2010-03-23 17:00 | 0d |  |  |  |  |  |  |
| 134 | 1.3.2.3.4 | **System Testing** |  | 12.38d | 2010-03-12 08:00 A | 2010-03-24 11:00 A |  | 100% | 2010-03-12 08:00 | 2010-03-24 11:00 | 12.38d |  | 11h | 11h | 1,650 | 1,650 | 1,650 |
| 135 | 1.3.2.3.4.1 | **System Requirments - Test Cases** |  | 3.38d | 2010-03-12 08:00 A | 2010-03-15 11:01 A |  | 100% | 2010-03-12 08:00 | 2010-03-15 11:01 | 3.38d |  | 8h | 8h | 1,200 | 1,200 | 1,200 |
| 136 | 1.3.2.3.4.1.1 | Draft - System Requirments - Test Cases |  | 3d | 2010-03-12 08:00 A | 2010-03-14 17:00 A | 123 | 100% | 2010-03-12 08:00 | 2010-03-14 17:00 | 3d | Anand Patil [20.8%] | 5h | 5h | 750 | 750 | 750 |
| 137 | 1.3.2.3.4.1.2 | Review - System Requirments - Test Cases |  | 0.12d | 2010-03-15 08:00 A | 2010-03-15 08:57 A | 136 | 100% | 2010-03-15 08:00 | 2010-03-15 08:57 | 0.12d | Anand Patil [21%]; Gino Gervasio [21%]; James Wu [21%]; Nathalie Neptune [21%]; Theodora Kampelou [21%] | 1h | 1h | 150 | 150 | 150 |
| 138 | 1.3.2.3.4.1.3 | Revise - System Requirments - Test Cases |  | 0.13d | 2010-03-15 08:57 A | 2010-03-15 09:59 A | 137 | 100% | 2010-03-15 08:57 | 2010-03-15 09:59 | 0.13d | Anand Patil [96.2%] | 1h | 1h | 150 | 150 | 150 |
| 139 | 1.3.2.3.4.1.4 | Finalize - System Requirments - Test Cases |  | 0.13d | 2010-03-15 09:59 A | 2010-03-15 11:01 A | 138 | 100% | 2010-03-15 09:59 | 2010-03-15 11:01 | 0.13d | Anand Patil [96.2%] | 1h | 1h | 150 | 150 | 150 |
| 140 | 1.3.2.3.4.1.5 | Complete - System Requirments - Test Cases | milestone | 0d | 2010-03-15 11:01 A | 2010-03-15 11:01 A | 139 | 100% | 2010-03-15 11:01 | 2010-03-15 11:01 | 0d |  |  |  |  |  |  |

| ID | WBS | Task | Type | Duration | Start | Finish | Predecessors | Complete | Baseline start | Baseline finish | Baseline duration | Constraint | Resources | Work | Actual work | Cost | Baseline cost | Actual cost |
| --- | --- | --- | --- | --- | --- | --- | --- | --- | --- | --- | --- | --- | --- | --- | --- | --- | --- | --- |
| 141 | 1.3.2.3.4.2 | **System Requirments - Test Cases - Execution** |  | 0.38d | 2010-03-24 08:00 A | 2010-03-24 11:00 A |  | 100% | 2010-03-24 08:00 | 2010-03-24 11:00 | 0.38d |  |  | 3h | 3h | 450 | 450 | 450 |
| 142 | 1.3.2.3.4.2.1 | Execution - System Requirements - Test Cases |  | 0.25d | 2010-03-24 08:00 A | 2010-03-24 10:00 A | 140, 133 | 100% | 2010-03-24 08:00 | 2010-03-24 10:00 | 0.25d |  | James Wu | 2h | 2h | 300 | 300 | 300 |
| 143 | 1.3.2.3.4.2.2 | Result Statistics - System Requirments - Test Cases |  | 0.12d | 2010-03-24 10:00 A | 2010-03-24 11:00 A | 142 | 100% | 2010-03-24 10:00 | 2010-03-24 11:00 | 0.12d |  | James Wu | 1h | 1h | 150 | 150 | 150 |
| 144 | 1.3.2.3.4.2.3 | Complete - System Requirments - Test Cases - Execution | milestone | 0d | 2010-03-24 11:00 A | 2010-03-24 11:00 A | 143 | 100% | 2010-03-24 11:00 | 2010-03-24 11:00 | 0d |  |  |  |  |  |  |  |
| 145 | 1.3.2.3.4.3 | Complete - System Testing | milestone | 0d | 2010-03-24 11:00 A | 2010-03-24 11:00 A | 144 | 100% | 2010-03-24 11:00 | 2010-03-24 11:00 | 0d |  |  |  |  |  |  |  |
| 146 | 1.3.2.3.5 | Evaluation |  | 0.12d | 2010-03-24 11:00 A | 2010-03-24 11:57 A | 145 | 100% | 2010-03-24 11:00 | 2010-03-24 11:57 | 0.12d |  | Anand Patil [21%]; Gino Gervasio [21%]; James Wu [21%]; Nathalie Neptune [21%]; Theodora Kampelou [21%] | 1h | 1h | 150 | 150 | 150 |
| 147 | 1.3.2.3.6 | Complete - Construction | milestone | 0d | 2010-03-24 11:57 A | 2010-03-24 11:57 A | 146 | 100% | 2010-03-24 11:57 | 2010-03-24 11:57 | 0d |  |  |  |  |  |  |  |
| 148 | 1.3.2.4 | Complete - Iteration-04 | milestone | 0d | 2010-03-24 11:57 A | 2010-03-24 11:57 A | 113, 120, 147 | 100% | 2010-03-24 11:57 | 2010-03-24 11:57 | 0d |  |  |  |  |  |  |  |
| 149 | 1.3.3 | **Iteration-05** |  | 23.25d | 2010-03-24 08:00 A | 2010-04-16 10:00 A |  | 100% | 2010-03-24 08:00 | 2010-04-07 11:57 | 14.49d | start no earlier than 2010-03-24 08:00 |  | 112h | 112h | 16,800 | 10,800 | 16,800 |
| 150 | 1.3.3.1 | **HCI Design Document** |  | 8.26d | 2010-03-24 08:00 A | 2010-04-01 10:02 A |  | 100% | 2010-03-24 08:00 | 2010-04-01 10:02 | 8.26d |  |  | 18h | 18h | 2,700 | 2,700 | 2,700 |
| 151 | 1.3.3.1.1 | Draft - HCI Design Document |  | 5d | 2010-03-24 08:00 A | 2010-03-28 17:00 A |  | 100% | 2010-03-24 08:00 | 2010-03-28 17:00 | 5d |  | James Wu [12.5%]; Anand Patil [12.5%] | 10h | 10h | 1,500 | 1,500 | 1,500 |
| 152 | 1.3.3.1.2 | Review - HCI Design Document |  | 1d | 2010-03-29 08:00 A | 2010-03-29 17:00 A | 151 | 100% | 2010-03-29 08:00 | 2010-03-29 17:00 | 1d |  | Anand Patil [7.5%]; Gino Gervasio [7.5%]; James Wu [7.5%]; Nathalie Neptune [7.5%]; Theodora Kampelou [7.5%] | 3h | 3h | 450 | 450 | 450 |
| 153 | 1.3.3.1.3 | Revise - HCI Design Document |  | 2d | 2010-03-30 08:00 A | 2010-03-31 17:00 A | 152 | 100% | 2010-03-30 08:00 | 2010-03-31 17:00 | 2d |  | James Wu [9.4%]; Anand Patil [9.4%] | 3h | 3h | 450 | 450 | 450 |
| 154 | 1.3.3.1.4 | Finalize - HCI Design Document |  | 0.13d | 2010-04-01 08:00 A | 2010-04-01 09:02 A | 153 | 100% | 2010-04-01 08:00 | 2010-04-01 09:02 | 0.13d |  | James Wu [48.1%]; Anand Patil [48.1%] | 1h | 1h | 150 | 150 | 150 |
| 155 | 1.3.3.1.5 | Submit - HCI Design Document |  | 0.12d | 2010-04-01 09:02 A | 2010-04-01 10:02 A | 154 | 100% | 2010-04-01 09:02 | 2010-04-01 10:02 | 0.12d |  | Anand Patil | 1h | 1h | 150 | 150 | 150 |
| 156 | 1.3.3.1.6 | Complete - HCI Design Document | milestone | 0d | 2010-04-01 10:02 A | 2010-04-01 10:02 A | 155 | 100% | 2010-04-01 10:02 | 2010-04-01 10:02 | 0d |  |  |  |  |  |  |  |
| 157 | 1.3.3.2 | **Network Design Document** |  | 8.26d | 2010-03-24 08:00 A | 2010-04-01 10:02 A |  | 100% | 2010-03-24 08:00 | 2010-04-01 10:02 | 8.26d |  |  | 23h | 23h | 3,450 | 2,700 | 3,450 |
| 158 | 1.3.3.2.1 | Draft - Network Design Document |  | 7.5d | 2010-03-24 08:00 A | 2010-03-31 12:00 A |  | 100% | 2010-03-24 08:00 | 2010-03-28 17:00 | 5d |  | Nathalie Neptune [2.8%]; Gino Gervasio [11.1%]; Theodora Kampelou [11.1%] | 15h | 15h | 2,250 | 1,500 | 2,250 |
| 159 | 1.3.3.2.2 | Review - Network Design Document |  | 1d | 2010-03-29 08:00 A | 2010-03-29 17:00 A | 158 | 100% | 2010-03-29 08:00 | 2010-03-29 17:00 | 1d |  | Anand Patil [7.5%]; Gino Gervasio [7.5%]; James Wu [7.5%]; Nathalie Neptune [7.5%]; Theodora Kampelou [7.5%] | 3h | 3h | 450 | 450 | 450 |
| 160 | 1.3.3.2.3 | Revise - Network Design Document |  | 2d | 2010-03-30 08:00 A | 2010-03-31 17:00 A | 159 | 100% | 2010-03-30 08:00 | 2010-03-31 17:00 | 2d |  | Nathalie Neptune [6.2%]; Gino Gervasio [11%]; Theodora Kampelou [11%] | 3h | 3h | 450 | 450 | 450 |
| 161 | 1.3.3.2.4 | Finalize - Network Design Document |  | 0.13d | 2010-04-01 08:00 A | 2010-04-01 09:02 A | 160 | 100% | 2010-04-01 08:00 | 2010-04-01 09:02 | 0.13d |  | Nathalie Neptune [32.1%]; Gino Gervasio [32.1%]; Theodora Kampelou [32.1%] | 1h | 1h | 150 | 150 | 150 |
| 162 | 1.3.3.2.5 | Submit - Network Design Document |  | 0.12d | 2010-04-01 09:02 A | 2010-04-01 10:02 A | 161 | 100% | 2010-04-01 09:02 | 2010-04-01 10:02 | 0.12d |  | Anand Patil | 1h | 1h | 150 | 150 | 150 |
| 163 | 1.3.3.2.6 | Complete - Network Design Document | milestone | 0d | 2010-04-01 10:02 A | 2010-04-01 10:02 A | 162 | 100% | 2010-04-01 10:02 | 2010-04-01 10:02 | 0d |  |  |  |  |  |  |  |
| 164 | 1.3.3.3 | **Construction** |  | 23.25d | 2010-03-24 08:00 A | 2010-04-16 10:00 A |  | 100% | 2010-03-24 08:00 | 2010-04-07 11:57 | 14.49d |  |  | 71h | 71h | 10,650 | 5,400 | 10,650 |
| 165 | 1.3.3.3.1 | Modeling/Requirements |  | 1d | 2010-03-24 08:00 A | 2010-03-24 17:00 A |  | 100% | 2010-03-24 08:00 | 2010-03-24 17:00 | 1d |  | Anand Patil [5%]; Gino Gervasio [5%]; James Wu [5%]; Nathalie Neptune [5%]; Theodora Kampelou [5%] | 2h | 2h | 300 | 300 | 300 |
| 166 | 1.3.3.3.2 | Analysis & Design |  | 1d | 2010-03-25 08:00 A | 2010-03-25 17:00 A | 165 | 100% | 2010-03-25 08:00 | 2010-03-25 17:00 | 1d |  | Gino Gervasio [31.2%]; James Wu [31.2%] | 5h | 5h | 750 | 750 | 750 |

| ID | WBS | Task | Type | Duration | Start | Finish | Predecessors | Complete | Baseline start | Baseline finish | Baseline duration | Resources | Work | Actual work | Cost | Baseline cost | Actual cost |
| --- | --- | --- | --- | --- | --- | --- | --- | --- | --- | --- | --- | --- | --- | --- | --- | --- | --- |
| 167 | 1.3.3.3.3 | **Implementation** |  | 21d | 2010-03-26 08:00 A | 2010-04-15 17:00 A |  | 100% | 2010-03-26 08:00 | 2010-04-06 17:00 | 12d |  | 52h | 52h | 7,800 | 2,550 | 7,800 |
| 168 | 1.3.3.3.3.1 | **Code and Unit Test** |  | 19.67d | 2010-03-26 08:00 A | 2010-04-14 14:20 A |  | 100% | 2010-03-26 08:00 | 2010-03-31 17:00 | 6d |  | 32h | 32h | 4,800 | 1,200 | 4,800 |
| 169 | 1.3.3.3.3.1.1 | Code |  | 15d | 2010-03-26 08:00 A | 2010-04-09 17:00 A | 166 | 100% | 2010-03-26 08:00 | 2010-03-29 17:00 | 4d | Gino Gervasio [10.4%]; James Wu [10.4%] | 25h | 25h | 3,750 | 750 | 3,750 |
| 170 | 1.3.3.3.3.1.2 | Unit Test |  | 4.67d | 2010-04-10 08:00 A | 2010-04-14 14:20 A | 169 | 100% | 2010-03-30 08:00 | 2010-03-31 17:00 | 2d | Gino Gervasio [9.4%]; James Wu [9.4%] | 7h | 7h | 1,050 | 450 | 1,050 |
| 171 | 1.3.3.3.3.1.3 | Complete - Code and Unit Test | milestone | 0d | 2010-04-14 08:00 A | 2010-04-14 08:00 A | 170 | 100% | 2010-03-31 17:00 | 2010-03-31 17:00 | 0d |  |  |  |  |  |  |
| 172 | 1.3.3.3.3.2 | **System Test Bug Fixes** |  | 2d | 2010-04-14 08:00 A | 2010-04-15 17:00 A |  | 100% | 2010-04-01 08:00 | 2010-04-06 17:00 | 6d |  | 20h | 20h | 3,000 | 1,350 | 3,000 |
| 173 | 1.3.3.3.3.2.1 | Code |  | 2d | 2010-04-14 08:00 A | 2010-04-15 17:00 A | 171 | 100% | 2010-04-01 08:00 | 2010-04-05 17:00 | 5d | Gino Gervasio [46.9%]; James Wu [46.9%] | 15h | 15h | 2,250 | 1,200 | 2,250 |
| 174 | 1.3.3.3.3.2.2 | Unit Test |  | 1d | 2010-04-15 08:00 A | 2010-04-15 17:00 A | 173 | 100% | 2010-04-06 08:00 | 2010-04-06 17:00 | 1d | Gino Gervasio [31.2%]; James Wu [31.2%] | 5h | 5h | 750 | 150 | 750 |
| 175 | 1.3.3.3.3.2.3 | Complete - System Test Bug Fixes | milestone | 0d | 2010-04-15 08:00 A | 2010-04-15 08:00 A | 174 | 100% | 2010-04-06 17:00 | 2010-04-06 17:00 | 0d |  |  |  |  |  |  |
| 176 | 1.3.3.3.3.3 | Complete - Implementation | milestone | 0d | 2010-04-15 08:00 A | 2010-04-15 08:00 A | 175 | 100% | 2010-04-06 17:00 | 2010-04-06 17:00 | 0d |  |  |  |  |  |  |
| 177 | 1.3.3.3.4 | **System Testing** |  | 21.25d | 2010-03-26 08:00 A | 2010-04-16 10:00 A |  | 100% | 2010-03-26 08:00 | 2010-04-07 11:00 | 12.38d |  | 11h | 11h | 1,650 | 1,650 | 1,650 |
| 178 | 1.3.3.3.4.1 | **System Requirments - Test Cases** |  | 3.38d | 2010-03-26 08:00 A | 2010-03-29 11:02 A |  | 100% | 2010-03-26 08:00 | 2010-03-29 11:02 | 3.38d |  | 8h | 8h | 1,200 | 1,200 | 1,200 |
| 179 | 1.3.3.3.4.1.1 | Draft - System Requirments - Test Cases |  | 3d | 2010-03-26 08:00 A | 2010-03-28 17:00 A | 166 | 100% | 2010-03-26 08:00 | 2010-03-28 17:00 | 3d | Anand Patil [20.8%] | 5h | 5h | 750 | 750 | 750 |
| 180 | 1.3.3.3.4.1.2 | Review - System Requirments - Test Cases |  | 0.12d | 2010-03-29 08:00 A | 2010-03-29 08:57 A | 179 | 100% | 2010-03-29 08:00 | 2010-03-29 08:57 | 0.12d | Anand Patil [20.8%]; Gino Gervasio [20.8%]; James Wu [20.8%]; Nathalie Neptune [20.8%]; Theodora Kampelou [20.8%] | 1h | 1h | 150 | 150 | 150 |
| 181 | 1.3.3.3.4.1.3 | Revise - System Requirments - Test Cases |  | 0.13d | 2010-03-29 08:57 A | 2010-03-29 10:00 A | 180 | 100% | 2010-03-29 08:57 | 2010-03-29 10:00 | 0.13d | Anand Patil [96.2%] | 1h | 1h | 150 | 150 | 150 |
| 182 | 1.3.3.3.4.1.4 | Finalize - System Requirments - Test Cases |  | 0.13d | 2010-03-29 10:00 A | 2010-03-29 11:02 A | 181 | 100% | 2010-03-29 10:00 | 2010-03-29 11:02 | 0.13d | Anand Patil [96.2%] | 1h | 1h | 150 | 150 | 150 |
| 183 | 1.3.3.3.4.1.5 | Complete - System Requirments - Test Cases | milestone | 0d | 2010-03-29 11:02 A | 2010-03-29 11:02 A | 182 | 100% | 2010-03-29 11:02 | 2010-03-29 11:02 | 0d |  |  |  |  |  |  |
| 184 | 1.3.3.3.4.2 | **System Requirments - Test Cases - Execution** |  | 0.25d | 2010-04-16 08:00 A | 2010-04-16 10:00 A |  | 100% | 2010-04-07 08:00 | 2010-04-07 11:00 | 0.38d |  | 3h | 3h | 450 | 450 | 450 |
| 185 | 1.3.3.3.4.2.1 | Execution - System Requirements - Test Cases |  | 0.25d | 2010-04-16 08:00 A | 2010-04-16 10:00 A | 183, 176 | 100% | 2010-04-07 08:00 | 2010-04-07 10:00 | 0.25d | James Wu | 2h | 2h | 300 | 300 | 300 |
| 186 | 1.3.3.3.4.2.2 | Result Statistics - System Requirments - Test Cases |  | 0.12d | 2010-04-16 08:00 A | 2010-04-16 09:00 A | 185 | 100% | 2010-04-07 10:00 | 2010-04-07 11:00 | 0.12d | James Wu | 1h | 1h | 150 | 150 | 150 |
| 187 | 1.3.3.3.4.2.3 | Complete - System Requirments - Test Cases - Execution | milestone | 0d | 2010-04-16 08:00 A | 2010-04-16 08:00 A | 186 | 100% | 2010-04-07 11:00 | 2010-04-07 11:00 | 0d |  |  |  |  |  |  |
| 188 | 1.3.3.3.4.3 | Complete - System Testing | milestone | 0d | 2010-04-16 08:00 A | 2010-04-16 08:00 A | 187 | 100% | 2010-04-07 11:00 | 2010-04-07 11:00 | 0d |  |  |  |  |  |  |
| 189 | 1.3.3.3.5 | Evaluation |  | 0.12d | 2010-04-16 08:00 A | 2010-04-16 08:57 A | 188 | 100% | 2010-04-07 11:00 | 2010-04-07 11:57 | 0.12d | Anand Patil [21%]; Gino Gervasio [21%]; James Wu [21%]; Nathalie Neptune [21%]; Theodora Kampelou [21%] | 1h | 1h | 150 | 150 | 150 |
| 190 | 1.3.3.3.6 | Complete - Construction | milestone | 0d | 2010-04-16 08:00 A | 2010-04-16 08:00 A | 189 | 100% | 2010-04-07 11:57 | 2010-04-07 11:57 | 0d |  |  |  |  |  |  |
| 191 | 1.3.3.4 | Complete - Iteration-05 | milestone | 0d | 2010-04-16 08:00 A | 2010-04-16 08:00 A | 156, 163, 190 | 100% | 2010-04-07 11:57 | 2010-04-07 11:57 | 0d |  |  |  |  |  |  |
| 192 | 1.3.4 | Complete - Construction Phase | milestone | 0d | 2010-04-16 08:00 A | 2010-04-16 08:00 A | 191 | 100% | 2010-04-07 11:57 | 2010-04-07 11:57 | 0d |  |  |  |  |  |  |

| ID | WBS | Task | Type | Duration | Start | Finish | Predecessors | Complete | Baseline start | Baseline finish | Baseline duration | Constraint | Resources | Work | Actual work | Cost | Baseline cost | Actual cost |
| --- | --- | --- | --- | --- | --- | --- | --- | --- | --- | --- | --- | --- | --- | --- | --- | --- | --- | --- |
| 193 | 1.4 | **Transition Phase** |  | 28.12d | 2010-04-07 08:00 A | 2010-05-05 09:00 A |  | 100% | 2010-04-07 08:00 | 2010-05-05 09:00 | 28.12d | start no earlier than 2010-04-07 08:00 |  | 65h | 65h | 9,750 | 9,750 | 9,750 |
| 194 | 1.4.1 | **Iteration-06** |  | 13.24d | 2010-04-07 08:00 A | 2010-04-20 09:57 A |  | 100% | 2010-04-07 08:00 | 2010-04-20 09:57 | 13.24d | start no earlier than 2010-04-07 08:00 |  | 33h | 33h | 4,950 | 4,950 | 4,950 |
| 195 | 1.4.1.1 | **Draft of Final Report** |  | 13.24d | 2010-04-07 08:00 A | 2010-04-20 09:57 A |  | 100% | 2010-04-07 08:00 | 2010-04-20 09:57 | 13.24d |  |  | 27h | 27h | 4,050 | 4,050 | 4,050 |
| 196 | 1.4.1.1.1 | Draft - Draft of Final Report |  | 7d | 2010-04-07 08:00 A | 2010-04-13 17:00 A |  | 100% | 2010-04-07 08:00 | 2010-04-13 17:00 | 7d |  | Anand Patil [5.4%]; Gino Gervasio [5.4%]; James Wu [5.4%]; Nathalie Neptune [5.4%]; Theodora Kampelou [5.4%] | 15h | 15h | 2,250 | 2,250 | 2,250 |
| 197 | 1.4.1.1.2 | Review - Draft of Final Report |  | 3d | 2010-04-14 08:00 A | 2010-04-16 17:00 A | 196 | 100% | 2010-04-14 08:00 | 2010-04-16 17:00 | 3d |  | Anand Patil [4.2%]; Gino Gervasio [4.2%]; James Wu [4.2%]; Nathalie Neptune [4.2%]; Theodora Kampelou [4.2%] | 5h | 5h | 750 | 750 | 750 |
| 198 | 1.4.1.1.3 | Revise - Draft of Final Report |  | 3d | 2010-04-17 08:00 A | 2010-04-19 17:00 A | 197 | 100% | 2010-04-17 08:00 | 2010-04-19 17:00 | 3d |  | Anand Patil [4.2%]; Gino Gervasio [4.2%]; James Wu [4.2%]; Nathalie Neptune [4.2%]; Theodora Kampelou [4.2%] | 5h | 5h | 750 | 750 | 750 |
| 199 | 1.4.1.1.4 | Finalize - Draft of Final Report |  | 0.12d | 2010-04-20 08:00 A | 2010-04-20 08:57 A | 198 | 100% | 2010-04-20 08:00 | 2010-04-20 08:57 | 0.12d |  | Anand Patil [21%]; Gino Gervasio [21%]; James Wu [21%]; Nathalie Neptune [21%]; Theodora Kampelou [21%] | 1h | 1h | 150 | 150 | 150 |
| 200 | 1.4.1.1.5 | Submit - Draft of Final Report |  | 0.12d | 2010-04-20 08:57 A | 2010-04-20 09:57 A | 199 | 100% | 2010-04-20 08:57 | 2010-04-20 09:57 | 0.12d |  | Anand Patil | 1h | 1h | 150 | 150 | 150 |
| 201 | 1.4.1.1.6 | Complete - Draft of Final Report | milestone | 0d | 2010-04-20 09:57 A | 2010-04-20 09:57 A | 200 | 100% | 2010-04-20 09:57 | 2010-04-20 09:57 | 0d |  |  |  |  |  |  |  |
| 202 | 1.4.1.2 | **Deployment** |  | 1.75d | 2010-04-07 08:00 A | 2010-04-08 15:00 A |  | 100% | 2010-04-07 08:00 | 2010-04-08 15:00 | 1.75d |  |  | 6h | 6h | 900 | 900 | 900 |
| 203 | 1.4.1.2.1 | Package Code |  | 0.5d | 2010-04-07 08:00 A | 2010-04-07 12:00 A |  | 100% | 2010-04-07 08:00 | 2010-04-07 12:00 | 0.5d |  | Gino Gervasio [25%]; James Wu [25%] | 2h | 2h | 300 | 300 | 300 |
| 204 | 1.4.1.2.2 | Client Delivery |  | 0.25d | 2010-04-07 13:00 A | 2010-04-07 15:00 A | 203 | 100% | 2010-04-07 13:00 | 2010-04-07 15:00 | 0.25d |  | Gino Gervasio [25%]; James Wu [25%] | 1h | 1h | 150 | 150 | 150 |
| 205 | 1.4.1.2.3 | Client Deployment and Test |  | 1d | 2010-04-07 15:00 A | 2010-04-08 15:00 A | 204 | 100% | 2010-04-07 15:00 | 2010-04-08 15:00 | 1d |  | Gino Gervasio [18.8%]; James Wu [18.8%] | 3h | 3h | 450 | 450 | 450 |
| 206 | 1.4.1.2.4 | Complete - Deployment | milestone | 0d | 2010-04-08 15:00 A | 2010-04-08 15:00 A | 205 | 100% | 2010-04-08 15:00 | 2010-04-08 15:00 | 0d |  |  |  |  |  |  |  |
| 207 | 1.4.1.3 | Complete - Iteration-06 | milestone | 0d | 2010-04-20 09:57 A | 2010-04-20 09:57 A | 200, 206 | 100% | 2010-04-20 09:57 | 2010-04-20 09:57 | 0d |  |  |  |  |  |  |  |
| 208 | 1.4.2 | **Iteration-07** |  | 14.12d | 2010-04-21 08:00 A | 2010-05-05 09:00 A |  | 100% | 2010-04-21 08:00 | 2010-05-05 09:00 | 14.12d | start no earlier than 2010-04-21 08:00 |  | 32h | 32h | 4,800 | 4,800 | 4,800 |
| 209 | 1.4.2.1 | **Final Report** |  | 11.12d | 2010-04-21 08:00 A | 2010-05-02 09:00 A |  | 100% | 2010-04-21 08:00 | 2010-05-02 09:00 | 11.12d |  |  | 23h | 23h | 3,450 | 3,450 | 3,450 |
| 210 | 1.4.2.1.1 | Review - Final Report (Draft of Final Report) |  | 7d | 2010-04-21 08:00 A | 2010-04-27 17:00 A | 200 | 100% | 2010-04-21 08:00 | 2010-04-27 17:00 | 7d |  | Anand Patil [5.4%]; Gino Gervasio [5.4%]; James Wu [5.4%]; Nathalie Neptune [5.4%]; Theodora Kampelou [5.4%] | 15h | 15h | 2,250 | 2,250 | 2,250 |
| 211 | 1.4.2.1.2 | Revise - Final Report |  | 3d | 2010-04-28 08:00 A | 2010-04-30 17:00 A | 210 | 100% | 2010-04-28 08:00 | 2010-04-30 17:00 | 3d |  | Anand Patil [4.2%]; Gino Gervasio [4.2%]; James Wu [4.2%]; Nathalie Neptune [4.2%]; Theodora Kampelou [4.2%] | 5h | 5h | 750 | 750 | 750 |
| 212 | 1.4.2.1.3 | Finalize - Final Report |  | 1d | 2010-05-01 08:00 A | 2010-05-01 17:00 A | 211 | 100% | 2010-05-01 08:00 | 2010-05-01 17:00 | 1d |  | Anand Patil [5%]; Gino Gervasio [5%]; James Wu [5%]; Nathalie Neptune [5%]; Theodora Kampelou [5%] | 2h | 2h | 300 | 300 | 300 |
| 213 | 1.4.2.1.4 | Submit - Final Report |  | 0.12d | 2010-05-02 08:00 A | 2010-05-02 09:00 A | 212 | 100% | 2010-05-02 08:00 | 2010-05-02 09:00 | 0.12d |  | Anand Patil | 1h | 1h | 150 | 150 | 150 |
| 214 | 1.4.2.1.5 | Complete - Final Report | milestone | 0d | 2010-05-02 09:00 A | 2010-05-02 09:00 A | 213 | 100% | 2010-05-02 09:00 | 2010-05-02 09:00 | 0d |  |  |  |  |  |  |  |
| 215 | 1.4.2.2 | **Final Presentation** |  | 14.12d | 2010-04-21 08:00 A | 2010-05-05 09:00 A |  | 100% | 2010-04-21 08:00 | 2010-05-05 09:00 | 14.12d |  |  | 9h | 9h | 1,350 | 1,350 | 1,350 |
| 216 | 1.4.2.2.1 | Draft - Final Presentation |  | 2d | 2010-04-21 08:00 A | 2010-04-22 17:00 A | 200 | 100% | 2010-04-21 08:00 | 2010-04-22 17:00 | 2d |  | Anand Patil [3.8%]; Gino Gervasio [3.8%]; James Wu [3.8%]; Nathalie Neptune [3.8%]; Theodora Kampelou [3.8%] | 3h | 3h | 450 | 450 | 450 |
| 217 | 1.4.2.2.2 | Review - Final Presentation |  | 1d | 2010-04-23 08:00 A | 2010-04-23 17:00 A | 216 | 100% | 2010-04-23 08:00 | 2010-04-23 17:00 | 1d |  | Anand Patil [5%]; Gino Gervasio [5%]; James Wu [5%]; Nathalie Neptune [5%]; Theodora Kampelou [5%] | 2h | 2h | 300 | 300 | 300 |
| 218 | 1.4.2.2.3 | Revise - Final Presentation |  | 0.5d | 2010-04-24 08:00 A | 2010-04-24 12:00 A | 217 | 100% | 2010-04-24 08:00 | 2010-04-24 12:00 | 0.5d |  | Anand Patil [5%]; Gino Gervasio [5%]; James Wu [5%]; Nathalie Neptune [5%]; Theodora Kampelou [5%] | 1h | 1h | 150 | 150 | 150 |
| 219 | 1.4.2.2.4 | Finalize - Final Presentation |  | 0.5d | 2010-04-24 13:00 A | 2010-04-24 17:00 A | 218 | 100% | 2010-04-24 13:00 | 2010-04-24 17:00 | 0.5d |  | Anand Patil [5%]; Gino Gervasio [5%]; James Wu [5%]; Nathalie Neptune [5%]; Theodora Kampelou [5%] | 1h | 1h | 150 | 150 | 150 |
| 220 | 1.4.2.2.5 | Submit - Final Presentation |  | 0.12d | 2010-04-25 08:00 A | 2010-04-25 09:00 A | 219 | 100% | 2010-04-25 08:00 | 2010-04-25 09:00 | 0.12d |  | Anand Patil | 1h | 1h | 150 | 150 | 150 |
| 221 | 1.4.2.2.6 | Present - Final Presentation |  | 0.12d | 2010-05-05 08:00 A | 2010-05-05 09:00 A | 220 | 100% | 2010-05-05 08:00 | 2010-05-05 09:00 | 0.12d | start no earlier than 2010-05-05 08:00 | Anand Patil [20%]; Gino Gervasio [20%]; James Wu [20%]; Nathalie Neptune [20%]; Theodora Kampelou [20%] | 1h | 1h | 150 | 150 | 150 |
| 222 | 1.4.2.2.7 | Complete - Final Presentation | milestone | 0d | 2010-05-05 09:00 A | 2010-05-05 09:00 A | 221 | 100% | 2010-05-05 09:00 | 2010-05-05 09:00 | 0d |  |  |  |  |  |  |  |
| 223 | 1.4.2.3 | Complete - Iteration-07 | milestone | 0d | 2010-05-05 09:00 A | 2010-05-05 09:00 A | 214, 222 | 100% | 2010-05-05 09:00 | 2010-05-05 09:00 | 0d |  |  |  |  |  |  |  |
| 224 | 1.4.3 | Complete - Transition Phase | milestone | 0d | 2010-05-05 09:00 A | 2010-05-05 09:00 A | 223 | 100% | 2010-05-05 09:00 | 2010-05-05 09:00 | 0d |  |  |  |  |  |  |  |
| 225 | 1.5 | Complete - IT Capstone Project | milestone | 0d | 2010-05-05 09:00 A | 2010-05-05 09:00 A | 224 | 100% | 2010-05-05 09:00 | 2010-05-05 09:00 | 0d |  |  |  |  |  |  |  |
