# ProjectPlan

Schedule from MS Project, 2006-01-23 to 2006-04-26, costs in $, A marks actual dates.
CMU

## Calendars

- Standard: Mon-Fri 08:00-12:00, 13:00-17:00; Sat-Sun off.

## Resources

| Resource | Rate |
| --- | --- |
| Rachel | 75 |
| Lukasz | 75 |
| Mike | 75 |
| Dick | 75 |

## Schedule

| ID | WBS | Task | Type | Duration | Start | Finish | Predecessors | Complete | Total slack | Constraint | Resources | Work | Actual work | Cost | Actual cost |
| --- | --- | --- | --- | --- | --- | --- | --- | --- | --- | --- | --- | --- | --- | --- | --- |
| 1 | 1 | Project start date | milestone | 0d | 2006-01-23 08:00 | 2006-01-23 08:00 |  |  | 60d |  |  |  |  |  |  |
| 2 | 2 | **Iteration 1** |  | 13.9d | 2006-01-23 08:00 A | 2006-02-09 16:10 A |  | 100% |  |  |  | 455.25h | 455.25h | 34,143.75 | 34,143.75 |
| 3 | 2.1 | **Form Team** |  | 0.38d | 2006-01-23 08:00 A | 2006-01-23 11:00 A |  | 100% |  |  |  | 12h | 12h | 900 | 900 |
| 4 | 2.1.1 | Identify members and their backgrounds |  | 1h | 2006-01-23 08:00 A | 2006-01-23 09:00 A |  | 100% |  |  | Dick; Lukasz; Mike; Rachel | 4h | 4h | 300 | 300 |
| 5 | 2.1.2 | Identify specific skills and concentrations |  | 1h | 2006-01-23 09:00 A | 2006-01-23 10:00 A | 4 | 100% |  |  | Dick; Lukasz; Mike; Rachel | 4h | 4h | 300 | 300 |
| 6 | 2.1.3 | Finalize team and roles |  | 1h | 2006-01-23 10:00 A | 2006-01-23 11:00 A | 5 | 100% |  |  | Dick; Lukasz; Mike; Rachel | 4h | 4h | 300 | 300 |
| 7 | 2.2 | **Client and project selection** |  | 7.12d | 2006-01-23 11:00 A | 2006-02-01 12:00 A | 3 | 100% |  |  |  | 228h | 228h | 17,100 | 17,100 |
| 8 | 2.2.1 | Research clients and projects |  | 3d | 2006-01-23 11:00 A | 2006-01-26 11:00 A |  | 100% |  |  | Dick; Lukasz; Mike; Rachel | 96h | 96h | 7,200 | 7,200 |
| 9 | 2.2.2 | Select project |  | 3d | 2006-01-26 11:00 A | 2006-01-31 11:00 A | 8 | 100% |  |  | Dick; Lukasz; Mike; Rachel | 96h | 96h | 7,200 | 7,200 |
| 10 | 2.2.3 | Contact client |  | 1d | 2006-01-31 11:00 A | 2006-02-01 11:00 A | 9 | 100% |  |  | Dick; Lukasz; Mike; Rachel | 32h | 32h | 2,400 | 2,400 |
| 11 | 2.2.4 | Meet client |  | 1h | 2006-02-01 11:00 A | 2006-02-01 12:00 A | 10 | 100% |  |  | Dick; Lukasz; Mike; Rachel | 4h | 4h | 300 | 300 |
| 12 | 2.3 | **Project proposal** |  | 2.76d | 2006-02-01 13:00 A | 2006-02-06 10:05 A | 7 | 100% |  |  |  | 70.08h | 70.08h | 5,256.25 | 5,256.25 |
| 13 | 2.3.1 | Develop initial draft |  | 6h | 2006-02-01 13:00 A | 2006-02-02 10:00 A |  | 100% |  |  | Dick | 6h | 6h | 450 | 450 |
| 14 | 2.3.2 | Review and revise draft |  | 2d | 2006-02-02 10:00 A | 2006-02-06 10:00 A | 13 | 100% |  |  | Dick; Rachel; Lukasz; Mike | 64h | 64h | 4,800 | 4,800 |
| 15 | 2.3.3 | Submit proposal |  | 5min | 2006-02-06 10:00 A | 2006-02-06 10:05 A | 14 | 100% |  |  | Dick | 0.08h | 0.08h | 6.25 | 6.25 |
| 16 | 2.4 | **System requirements** |  | 3.39d | 2006-02-06 10:05 A | 2006-02-09 14:10 A | 12 | 100% |  |  |  | 75.08h | 75.08h | 5,631.25 | 5,631.25 |
| 17 | 2.4.1 | Develop initial draft |  | 6h | 2006-02-06 10:05 A | 2006-02-07 08:05 A |  | 100% |  |  | Lukasz | 6h | 6h | 450 | 450 |
| 18 | 2.4.2 | Review requirements with client |  | 2h | 2006-02-07 08:05 A | 2006-02-07 10:05 A | 17 | 100% |  |  | Lukasz | 2h | 2h | 150 | 150 |
| 19 | 2.4.3 | Review and revise draft |  | 2d | 2006-02-07 10:05 A | 2006-02-09 10:05 A | 18 | 100% |  |  | Dick; Rachel; Lukasz; Mike | 64h | 64h | 4,800 | 4,800 |
| 20 | 2.4.4 | Compile revisions into final draft |  | 3h | 2006-02-09 10:05 A | 2006-02-09 14:05 A | 19 | 100% |  |  | Lukasz | 3h | 3h | 225 | 225 |
| 21 | 2.4.5 | Submit final draft |  | 5min | 2006-02-09 14:05 A | 2006-02-09 14:10 A | 20 | 100% |  |  | Lukasz | 0.08h | 0.08h | 6.25 | 6.25 |
| 22 | 2.5 | **Strategic mini plan** |  | 2.51d | 2006-02-06 10:05 A | 2006-02-08 15:10 A | 12 | 100% |  |  |  | 68.08h | 68.08h | 5,106.25 | 5,106.25 |
| 23 | 2.5.1 | Complete external analysis |  | 8h | 2006-02-06 10:05 A | 2006-02-07 10:05 A |  | 100% |  |  | Rachel | 8h | 8h | 600 | 600 |
| 24 | 2.5.2 | Complete internal analysis |  | 8h | 2006-02-06 10:05 A | 2006-02-07 10:05 A |  | 100% |  |  | Dick | 8h | 8h | 600 | 600 |
| 25 | 2.5.3 | Complete resources, capabilities, competitive advantages analysis |  | 8h | 2006-02-06 10:05 A | 2006-02-07 10:05 A |  | 100% |  |  | Mike | 8h | 8h | 600 | 600 |
| 26 | 2.5.4 | Complete strategic analysis |  | 8h | 2006-02-06 10:05 A | 2006-02-07 10:05 A |  | 100% |  |  | Lukasz | 8h | 8h | 600 | 600 |
| 27 | 2.5.5 | Compile strategic mini plan initial draft |  | 3h | 2006-02-07 10:05 A | 2006-02-07 14:05 A | 23, 24, 25, 26 | 100% |  |  | Mike | 3h | 3h | 225 | 225 |
| 28 | 2.5.6 | Review and revise draft |  | 1d | 2006-02-07 14:05 A | 2006-02-08 14:05 A | 27 | 100% |  |  | Dick; Lukasz; Mike; Rachel | 32h | 32h | 2,400 | 2,400 |
| 29 | 2.5.7 | Compile revisions into final draft |  | 1h | 2006-02-08 14:05 A | 2006-02-08 15:05 A | 28 | 100% |  |  | Dick | 1h | 1h | 75 | 75 |
| 30 | 2.5.8 | Submit strategic mini plan |  | 5min | 2006-02-08 15:05 A | 2006-02-08 15:10 A | 29 | 100% |  |  | Dick | 0.08h | 0.08h | 6.25 | 6.25 |
| 31 | 2.6 | Setup hosting, development and collaboration environment |  | 2h | 2006-02-09 14:10 A | 2006-02-09 16:10 A | 16 | 100% |  |  | Lukasz | 2h | 2h | 150 | 150 |
| 32 | 3 | End of Iteration 1 |  | 1d | 2006-02-17 08:00 A | 2006-02-17 17:00 A |  | 100% |  | start no earlier than 2006-02-17 08:00 |  |  |  |  |  |

| ID | WBS | Task | Duration | Start | Finish | Predecessors | Complete | Remaining | Total slack | Free slack | Constraint | Resources | Work | Actual work | Cost | Actual cost |
| --- | --- | --- | --- | --- | --- | --- | --- | --- | --- | --- | --- | --- | --- | --- | --- | --- |
| 33 | 4 | **Iteration 2** | 6.76d | 2006-02-20 08:00 A | 2006-02-28 15:05 | 32 | 38% | 4.19d | 40.25d |  | start no earlier than 2006-02-18 08:00 |  | 292.92h | 100h | 21,968.75 | 7,500 |
| 34 | 4.1 | **Cost/benefit analysis** | 6.26d | 2006-02-20 08:00 A | 2006-02-28 10:05 |  | 16% | 5.26d | 40.75d |  |  |  | 106.08h | 16h | 7,956.25 | 1,200 |
| 35 | 4.1.1 | Research cost/benefit analysis | 1d | 2006-02-20 08:00 A | 2006-02-20 17:00 A |  | 100% |  |  |  |  | Mike; Dick | 16h | 16h | 1,200 | 1,200 |
| 36 | 4.1.2 | Complete initial draft | 3d | 2006-02-21 08:00 | 2006-02-23 17:00 | 35 |  |  | 40.75d | 0d |  | Dick | 24h |  | 1,800 |  |
| 37 | 4.1.3 | Review and revise draft | 2d | 2006-02-24 08:00 | 2006-02-27 17:00 | 36 |  |  | 40.75d | 0d |  | Dick; Lukasz; Mike; Rachel | 64h |  | 4,800 |  |
| 38 | 4.1.4 | Compile final draft | 2h | 2006-02-28 08:00 | 2006-02-28 10:00 | 37 |  |  | 40.75d | 0d |  | Dick | 2h |  | 150 |  |
| 39 | 4.1.5 | Submit final draft | 5min | 2006-02-28 10:00 | 2006-02-28 10:05 | 38 |  |  | 40.75d |  |  | Dick | 0.08h |  | 6.25 |  |
| 40 | 4.2 | **Project management plan/schedule** | 6.76d | 2006-02-20 08:00 A | 2006-02-28 15:05 |  | 81% | 1.26d | 40.25d |  |  |  | 118.08h | 84h | 8,856.25 | 6,300 |
| 41 | 4.2.1 | Define project tasks | 4d | 2006-02-20 08:00 A | 2006-02-23 17:00 A |  | 100% |  |  |  |  | Lukasz; Rachel | 64h | 64h | 4,800 | 4,800 |
| 42 | 4.2.2 | Develop initial schedule for task completion | 8h | 2006-02-24 08:00 A | 2006-02-24 17:00 A | 41 | 100% |  |  |  |  | Lukasz; Rachel | 16h | 16h | 1,200 | 1,200 |
| 43 | 4.2.3 | Determine resources | 4h | 2006-02-27 08:00 A | 2006-02-27 12:00 A | 42 | 100% |  |  |  |  | Rachel | 4h | 4h | 300 | 300 |
| 44 | 4.2.4 | Review and revise project plan/schedule | 1d | 2006-02-27 13:00 | 2006-02-28 12:00 | 43 |  |  | 40.25d | 0d |  | Dick; Lukasz; Mike; Rachel | 32h |  | 2,400 |  |
| 45 | 4.2.5 | Compile final project plan/schedule | 2h | 2006-02-28 13:00 | 2006-02-28 15:00 | 44 |  |  | 40.25d | 0d |  | Rachel | 2h |  | 150 |  |
| 46 | 4.2.6 | Submit final project plan/schedule | 5min | 2006-02-28 15:00 | 2006-02-28 15:05 | 45 |  |  | 40.25d |  |  | Rachel | 0.08h |  | 6.25 |  |
| 47 | 4.3 | **Database requirements** | 0.64d | 2006-02-20 08:00 | 2006-02-20 14:05 |  |  |  | 46.38d |  |  |  | 11.08h |  | 831.25 |  |
| 48 | 4.3.1 | Develop database requirements | 3h | 2006-02-20 08:00 | 2006-02-20 11:00 |  |  |  | 46.38d | 0d |  | Dick; Lukasz; Mike | 9h |  | 675 |  |
| 49 | 4.3.2 | Review requirements with client | 1h | 2006-02-20 11:00 | 2006-02-20 12:00 | 48 |  |  | 46.38d | 0d |  | Lukasz | 1h |  | 75 |  |
| 50 | 4.3.3 | Compile final database requirements | 1h | 2006-02-20 13:00 | 2006-02-20 14:00 | 49 |  |  | 46.38d | 0d |  | Dick | 1h |  | 75 |  |
| 51 | 4.3.4 | Submit database requirements | 5min | 2006-02-20 14:00 | 2006-02-20 14:05 | 50 |  |  | 46.38d |  |  | Dick | 0.08h |  | 6.25 |  |
| 52 | 4.4 | **Backend Architecture** | 0.51d | 2006-02-20 08:00 | 2006-02-20 13:05 |  |  |  | 46.5d |  |  |  | 8.08h |  | 606.25 |  |
| 53 | 4.4.1 | Develop backend architecture | 2h | 2006-02-20 08:00 | 2006-02-20 10:00 |  |  |  | 46.5d | 0d |  | Dick; Lukasz; Mike | 6h |  | 450 |  |
| 54 | 4.4.2 | Review backend architecture with client | 1h | 2006-02-20 10:00 | 2006-02-20 11:00 | 53 |  |  | 46.5d | 0d |  | Lukasz | 1h |  | 75 |  |
| 55 | 4.4.3 | Compile final backend architecture | 1h | 2006-02-20 11:00 | 2006-02-20 12:00 | 54 |  |  | 46.5d | 0d |  | Mike | 1h |  | 75 |  |
| 56 | 4.4.4 | Submit backend architecture | 5min | 2006-02-20 13:00 | 2006-02-20 13:05 | 55 |  |  | 46.5d |  |  | Mike | 0.08h |  | 6.25 |  |

| ID | WBS | Task | Duration | Start | Finish | Predecessors | Total slack | Free slack | Constraint | Resources | Work | Cost |
| --- | --- | --- | --- | --- | --- | --- | --- | --- | --- | --- | --- | --- |
| 57 | 4.5 | **Database schema** | 0.64d | 2006-02-20 08:00 | 2006-02-20 14:05 |  | 46.38d |  |  |  | 11.08h | 831.25 |
| 58 | 4.5.1 | Develop database schema | 3h | 2006-02-20 08:00 | 2006-02-20 11:00 |  | 46.38d | 0d |  | Dick; Lukasz; Mike | 9h | 675 |
| 59 | 4.5.2 | Review schema with client | 1h | 2006-02-20 11:00 | 2006-02-20 12:00 | 58 | 46.38d | 0d |  | Lukasz | 1h | 75 |
| 60 | 4.5.3 | Compile final database schema- | 1h | 2006-02-20 13:00 | 2006-02-20 14:00 | 59 | 46.38d | 0d |  | Mike | 1h | 75 |
| 61 | 4.5.4 | Submit schema | 5min | 2006-02-20 14:00 | 2006-02-20 14:05 | 60 | 46.38d |  |  | Mike | 0.08h | 6.25 |
| 62 | 4.6 | Setup project in subversion | 30min | 2006-02-20 08:00 | 2006-02-20 08:30 |  | 44.95d | 0d |  | Lukasz | 0.5h | 37.5 |
| 63 | 4.7 | **Implementation** | 1d | 2006-02-20 08:30 | 2006-02-21 08:30 | 62 | 44.95d | 0d |  |  | 18h | 1,350 |
| 64 | 4.7.1 | Commerce Manager > Product Catalog Module | 8h | 2006-02-20 08:30 | 2006-02-21 08:30 |  | 44.95d |  |  | Lukasz; Mike | 16h | 1,200 |
| 65 | 4.7.2 | Commerce Manager > Settings Module | 1h | 2006-02-20 08:30 | 2006-02-20 09:30 |  | 45.82d |  |  | Lukasz; Mike | 2h | 150 |
| 66 | 4.8 | **Testing and Debugging** | 0.75d | 2006-02-21 08:30 | 2006-02-21 15:30 | 63 | 44.95d | 0d |  |  | 16h | 1,200 |
| 67 | 4.8.1 | Testing Commerce Manager and reporting bugs | 2h | 2006-02-21 08:30 | 2006-02-21 10:30 |  | 44.95d | 0d |  | Dick; Lukasz; Mike; Rachel | 8h | 600 |
| 68 | 4.8.2 | Applying fixes to Commerce Manager | 4h | 2006-02-21 10:30 | 2006-02-21 15:30 | 67 | 44.95d |  |  | Lukasz; Mike | 8h | 600 |
| 69 | 4.9 | Release application to the test server | 1h | 2006-02-21 15:30 | 2006-02-21 16:30 | 66 | 45.07d |  |  | Lukasz | 1h | 75 |
| 70 | 4.10 | Revise system requirements | 1h | 2006-02-21 15:30 | 2006-02-21 16:30 | 66 | 44.95d | 0d |  | Lukasz; Mike | 2h | 150 |
| 71 | 4.11 | Update project management plan/schedule | 1h | 2006-02-21 16:30 | 2006-02-22 08:30 | 70 | 44.95d |  |  | Rachel | 1h | 75 |
| 72 | 5 | End of Iteration 2 | 1d | 2006-03-03 08:00 | 2006-03-03 17:00 |  | 30d |  | start no earlier than 2006-03-03 08:00 |  |  |  |
| 73 | 6 | **Iteration 3** | 10d | 2006-03-06 08:00 | 2006-03-17 17:00 | 72 | 27.01d |  | start no earlier than 2006-03-04 08:00 |  | 50h | 3,750 |
| 74 | 6.1 | **Implementation** | 0.75d | 2006-03-06 08:00 | 2006-03-06 15:00 |  | 34.64d | 0d |  |  | 20h | 1,500 |
| 75 | 6.1.1 | Commerce Manager > Customers Module | 4h | 2006-03-06 08:00 | 2006-03-06 12:00 |  | 34.89d |  |  | Lukasz; Mike | 8h | 600 |
| 76 | 6.1.2 | Commerce Manager > Orders Module | 6h | 2006-03-06 08:00 | 2006-03-06 15:00 |  | 34.64d |  |  | Lukasz; Mike | 12h | 900 |
| 77 | 6.2 | **Revisions** | 0.5d | 2006-03-06 15:00 | 2006-03-07 10:00 | 74 | 34.64d | 0d |  |  | 10h | 750 |
| 78 | 6.2.1 | Commerce Manager > Product Catalog Module | 4h | 2006-03-06 15:00 | 2006-03-07 10:00 |  | 34.64d |  |  | Lukasz; Mike | 8h | 600 |
| 79 | 6.2.2 | Commerce Manager > Settings Module | 1h | 2006-03-06 15:00 | 2006-03-06 16:00 |  | 35.01d |  |  | Lukasz; Mike | 2h | 150 |
| 80 | 6.3 | **Testing and Debugging** | 0.75d | 2006-03-07 10:00 | 2006-03-07 17:00 | 77 | 34.64d | 0d |  |  | 16h | 1,200 |
| 81 | 6.3.1 | Testing Commerce Manager and reporting bugs | 2h | 2006-03-07 10:00 | 2006-03-07 12:00 |  | 34.64d | 0d |  | Dick; Lukasz; Mike; Rachel | 8h | 600 |
| 82 | 6.3.2 | Applying fixes to Commerce Manager | 4h | 2006-03-07 13:00 | 2006-03-07 17:00 | 81 | 34.64d |  |  | Lukasz; Mike | 8h | 600 |
| 83 | 6.4 | Release application to the test server | 1h | 2006-03-08 08:00 | 2006-03-08 09:00 | 80 | 34.64d | 0d |  | Lukasz | 1h | 75 |
| 84 | 6.5 | Revise system requirements | 1h | 2006-03-08 09:00 | 2006-03-08 10:00 | 83 | 34.64d | 0d |  | Lukasz; Mike | 2h | 150 |
| 85 | 6.6 | Update project management plan/schedule | 1h | 2006-03-08 10:00 | 2006-03-08 11:00 | 84 | 34.64d |  |  | Rachel | 1h | 75 |
| 86 | 6.7 | End of Iteration 3 | 1d | 2006-03-17 08:00 | 2006-03-17 17:00 |  | 20d |  | start no earlier than 2006-03-17 08:00 |  |  |  |

| ID | WBS | Task | Duration | Start | Finish | Predecessors | Total slack | Free slack | Constraint | Resources | Work | Cost |
| --- | --- | --- | --- | --- | --- | --- | --- | --- | --- | --- | --- | --- |
| 87 | 7 | **Iteration 4** | 10d | 2006-03-20 08:00 | 2006-03-31 17:00 | 86 | 17.01d |  | start no earlier than 2006-03-18 08:00 |  | 127.08h | 9,531.25 |
| 88 | 7.1 | **Systems architecture** | 0.89d | 2006-03-20 08:00 | 2006-03-20 16:05 |  | 26.12d |  |  |  | 10.08h | 756.25 |
| 89 | 7.1.1 | Develop document detailing architecture | 5h | 2006-03-20 08:00 | 2006-03-20 14:00 |  | 26.12d | 0d |  | Lukasz | 5h | 375 |
| 90 | 7.1.2 | Review architecture document with client | 1h | 2006-03-20 14:00 | 2006-03-20 15:00 | 89 | 26.12d | 0d |  | Dick; Rachel; Lukasz; Mike | 4h | 300 |
| 91 | 7.1.3 | Compile final architecture document | 1h | 2006-03-20 15:00 | 2006-03-20 16:00 | 90 | 26.12d | 0d |  | Dick | 1h | 75 |
| 92 | 7.1.4 | Submit final architecture document | 5min | 2006-03-20 16:00 | 2006-03-20 16:05 | 91 | 26.12d |  |  | Dick | 0.08h | 6.25 |
| 93 | 7.2 | **Software engineering** | 2.12d | 2006-03-20 08:00 | 2006-03-22 09:00 |  | 24.89d |  |  |  | 41h | 3,075 |
| 94 | 7.2.1 | Develop document detailing software engineering usage | 5h | 2006-03-20 08:00 | 2006-03-20 14:00 |  | 24.89d | 0d |  | Rachel | 5h | 375 |
| 95 | 7.2.2 | Review document | 1d | 2006-03-20 14:00 | 2006-03-21 14:00 | 94 | 24.89d | 0d |  | Rachel; Dick; Lukasz; Mike | 32h | 2,400 |
| 96 | 7.2.3 | Compile final software engineering document | 2h | 2006-03-21 14:00 | 2006-03-21 16:00 | 95 | 24.89d | 0d |  | Rachel | 2h | 150 |
| 97 | 7.2.4 | Submit final software engineering document | 2h | 2006-03-21 16:00 | 2006-03-22 09:00 | 96 | 24.89d |  |  | Rachel | 2h | 150 |
| 98 | 7.3 | **Implementation** | 2.5d | 2006-03-20 08:00 | 2006-03-22 12:00 |  | 22.89d |  |  |  | 40h | 3,000 |
| 99 | 7.3.1 | Storefront | 20h | 2006-03-20 08:00 | 2006-03-22 12:00 |  | 22.89d | 0d |  | Lukasz; Mike | 40h | 3,000 |
| 100 | 7.4 | **Revisions** | 0.5d | 2006-03-22 13:00 | 2006-03-22 17:00 |  | 22.89d | 0d |  |  | 16h | 1,200 |
| 101 | 7.4.1 | Commerce Manager > Product Catalog Module | 1h | 2006-03-22 13:00 | 2006-03-22 14:00 | 99 | 23.26d |  |  | Lukasz; Mike | 2h | 150 |
| 102 | 7.4.2 | Commerce Manager > Settings Module | 1h | 2006-03-22 13:00 | 2006-03-22 14:00 | 99 | 23.26d |  |  | Lukasz; Mike | 2h | 150 |
| 103 | 7.4.3 | Commerce Manager > Customers Module | 2h | 2006-03-22 13:00 | 2006-03-22 15:00 | 99 | 23.14d |  |  | Lukasz; Mike | 4h | 300 |
| 104 | 7.4.4 | Commerce Manager > Orders Module | 4h | 2006-03-22 13:00 | 2006-03-22 17:00 | 99 | 22.89d |  |  | Lukasz; Mike | 8h | 600 |
| 105 | 7.5 | **Testing and Debugging** | 0.75d | 2006-03-23 08:00 | 2006-03-23 15:00 | 100 | 22.89d | 0d |  |  | 16h | 1,200 |
| 106 | 7.5.1 | Testing and reporting bugs | 2h | 2006-03-23 08:00 | 2006-03-23 10:00 |  | 22.89d | 0d |  | Dick; Lukasz; Mike; Rachel | 8h | 600 |
| 107 | 7.5.2 | Applying fixes | 4h | 2006-03-23 10:00 | 2006-03-23 15:00 | 106 | 22.89d |  |  | Lukasz; Mike | 8h | 600 |
| 108 | 7.6 | Release application to the test server | 1h | 2006-03-23 15:00 | 2006-03-23 16:00 | 105 | 22.89d | 0d |  | Lukasz | 1h | 75 |
| 109 | 7.7 | Revise system requirements | 1h | 2006-03-23 16:00 | 2006-03-23 17:00 | 108 | 22.89d | 0d |  | Lukasz; Mike | 2h | 150 |
| 110 | 7.8 | Update project management plan/schedule | 1h | 2006-03-24 08:00 | 2006-03-24 09:00 | 109 | 22.89d |  |  | Rachel | 1h | 75 |
| 111 | 7.9 | End of Iteration 4 | 1d | 2006-03-31 08:00 | 2006-03-31 17:00 |  | 10d |  | start no earlier than 2006-03-31 08:00 |  |  |  |

| ID | WBS | Task | Type | Duration | Start | Finish | Predecessors | Total slack | Free slack | Constraint | Resources | Work | Cost |
| --- | --- | --- | --- | --- | --- | --- | --- | --- | --- | --- | --- | --- | --- |
| 112 | 8 | **Iteration 5** |  | 9d | 2006-04-03 08:00 | 2006-04-14 08:00 | 111 | 8.01d |  | start no earlier than 2006-04-01 08:00 |  | 174.17h | 13,062.5 |
| 113 | 8.1 | **Usability requirements** |  | 2.01d | 2006-04-03 08:00 | 2006-04-05 08:05 |  | 15d |  |  |  | 43.08h | 3,231.25 |
| 114 | 8.1.1 | Review necessary requirements with client |  | 1h | 2006-04-03 08:00 | 2006-04-03 09:00 |  | 15d | 0d |  | Rachel; Dick; Lukasz; Mike | 4h | 300 |
| 115 | 8.1.2 | Develop document detailing requirements |  | 5h | 2006-04-03 09:00 | 2006-04-03 15:00 | 114 | 15d | 0d |  | Rachel | 5h | 375 |
| 116 | 8.1.3 | Review requirements document |  | 1d | 2006-04-03 15:00 | 2006-04-04 15:00 | 115 | 15d | 0d |  | Rachel; Dick; Lukasz; Mike | 32h | 2,400 |
| 117 | 8.1.4 | Compile final requirements document |  | 2h | 2006-04-04 15:00 | 2006-04-04 17:00 | 116 | 15d | 0d |  | Dick | 2h | 150 |
| 118 | 8.1.5 | Submit final requirements document |  | 5min | 2006-04-05 08:00 | 2006-04-05 08:05 | 117 | 15d |  |  | Dick | 0.08h | 6.25 |
| 119 | 8.2 | **Front-end architecture** |  | 1.89d | 2006-04-03 08:00 | 2006-04-04 16:05 |  | 15.12d |  |  |  | 39.08h | 2,931.25 |
| 120 | 8.2.1 | Develop document detailing architecture |  | 5h | 2006-04-03 08:00 | 2006-04-03 14:00 |  | 15.12d | 0d |  | Dick | 5h | 375 |
| 121 | 8.2.2 | Review architecture document |  | 1d | 2006-04-03 14:00 | 2006-04-04 14:00 | 120 | 15.12d | 0d |  | Dick; Lukasz; Mike; Rachel | 32h | 2,400 |
| 122 | 8.2.3 | Compile final architecture document |  | 2h | 2006-04-04 14:00 | 2006-04-04 16:00 | 121 | 15.12d | 0d |  | Rachel | 2h | 150 |
| 123 | 8.2.4 | Submit final architecture document |  | 5min | 2006-04-04 16:00 | 2006-04-04 16:05 | 122 | 15.12d |  |  | Rachel | 0.08h | 6.25 |
| 124 | 8.3 | **Implementation** |  | 2.5d | 2006-04-03 08:00 | 2006-04-05 12:00 |  | 12.39d | 0d |  |  | 40h | 3,000 |
| 125 | 8.3.1 | Storefront Web Services API |  | 20h | 2006-04-03 08:00 | 2006-04-05 12:00 |  | 12.39d |  |  | Lukasz; Mike | 40h | 3,000 |
| 126 | 8.4 | **Revisions** |  | 1d | 2006-04-05 13:00 | 2006-04-06 12:00 | 124 | 12.39d | 0d |  |  | 32h | 2,400 |
| 127 | 8.4.1 | Commerce Manager > Product Catalog Module |  | 1h | 2006-04-05 13:00 | 2006-04-05 14:00 |  | 13.26d |  |  | Lukasz; Mike | 2h | 150 |
| 128 | 8.4.2 | Commerce Manager > Settings Module |  | 1h | 2006-04-05 13:00 | 2006-04-05 14:00 |  | 13.26d |  |  | Lukasz; Mike | 2h | 150 |
| 129 | 8.4.3 | Commerce Manager > Customers Module |  | 2h | 2006-04-05 13:00 | 2006-04-05 15:00 |  | 13.14d |  |  | Lukasz; Mike | 4h | 300 |
| 130 | 8.4.4 | Commerce Manager > Orders Module |  | 4h | 2006-04-05 13:00 | 2006-04-05 17:00 |  | 12.89d |  |  | Lukasz; Mike | 8h | 600 |
| 131 | 8.4.5 | Storefront |  | 8h | 2006-04-05 13:00 | 2006-04-06 12:00 |  | 12.39d |  |  | Lukasz; Mike | 16h | 1,200 |
| 132 | 8.5 | **Testing and Debugging** |  | 0.75d | 2006-04-06 13:00 | 2006-04-07 10:00 | 126 | 12.39d | 0d |  |  | 16h | 1,200 |
| 133 | 8.5.1 | Testing and reporting bugs |  | 2h | 2006-04-06 13:00 | 2006-04-06 15:00 |  | 12.39d | 0d |  | Dick; Lukasz; Mike; Rachel | 8h | 600 |
| 134 | 8.5.2 | Applying fixes |  | 4h | 2006-04-06 15:00 | 2006-04-07 10:00 | 133 | 12.39d |  |  | Lukasz; Mike | 8h | 600 |
| 135 | 8.6 | Release application to the test server |  | 1h | 2006-04-07 10:00 | 2006-04-07 11:00 | 132 | 12.39d | 0d |  | Lukasz | 1h | 75 |
| 136 | 8.7 | Revise system requirements |  | 1h | 2006-04-07 11:00 | 2006-04-07 12:00 | 135 | 12.39d | 0d |  | Lukasz; Mike | 2h | 150 |
| 137 | 8.8 | Update project management plan/schedule |  | 1h | 2006-04-07 13:00 | 2006-04-07 14:00 | 136 | 12.39d |  |  | Rachel | 1h | 75 |
| 138 | 8.9 | End of Iteration 5 | milestone | 0d | 2006-04-14 08:00 | 2006-04-14 08:00 |  | 1d |  | start no earlier than 2006-04-14 08:00 |  |  |  |

| ID | WBS | Task | Duration | Start | Finish | Predecessors | Total slack | Free slack | Constraint | Resources | Work | Cost |
| --- | --- | --- | --- | --- | --- | --- | --- | --- | --- | --- | --- | --- |
| 139 | 9 | **Iteration 6** | 7.01d | 2006-04-17 08:00 | 2006-04-26 08:05 | 138 | 0d |  | start no earlier than 2006-04-15 08:00 |  | 328.33h | 24,625 |
| 140 | 9.1 | **Network requirements** | 1.14d | 2006-04-17 08:00 | 2006-04-18 09:05 |  | 5.88d |  |  |  | 15.08h | 1,131.25 |
| 141 | 9.1.1 | Review necessary requirements with client | 1h | 2006-04-17 08:00 | 2006-04-17 09:00 |  | 5.88d | 0d |  | Dick; Lukasz; Mike; Rachel | 4h | 300 |
| 142 | 9.1.2 | Develop document detailing network requirements | 5h | 2006-04-17 09:00 | 2006-04-17 15:00 | 141 | 5.88d | 0d |  | Rachel | 5h | 375 |
| 143 | 9.1.3 | Review network requirements document | 1h | 2006-04-17 15:00 | 2006-04-17 16:00 | 142 | 5.88d | 0d |  | Dick; Lukasz; Mike; Rachel | 4h | 300 |
| 144 | 9.1.4 | Compile final network requirements document | 2h | 2006-04-17 16:00 | 2006-04-18 09:00 | 143 | 5.88d | 0d |  | Dick | 2h | 150 |
| 145 | 9.1.5 | Submit final network requirements document | 5min | 2006-04-18 09:00 | 2006-04-18 09:05 | 144 | 5.88d |  |  | Dick | 0.08h | 6.25 |
| 146 | 9.2 | **Network architecture** | 1.01d | 2006-04-17 08:00 | 2006-04-18 08:05 |  | 6d |  |  |  | 11.08h | 831.25 |
| 147 | 9.2.1 | Develop document detailing network architecture | 5h | 2006-04-17 08:00 | 2006-04-17 14:00 |  | 6d | 0d |  | Dick | 5h | 375 |
| 148 | 9.2.2 | Review network architecture document | 1h | 2006-04-17 14:00 | 2006-04-17 15:00 | 147 | 6d | 0d |  | Dick; Lukasz; Mike; Rachel | 4h | 300 |
| 149 | 9.2.3 | Compile final network architecture document | 2h | 2006-04-17 15:00 | 2006-04-17 17:00 | 148 | 6d | 0d |  | Rachel | 2h | 150 |
| 150 | 9.2.4 | Submit final network architecture document | 5min | 2006-04-18 08:00 | 2006-04-18 08:05 | 149 | 6d |  |  | Rachel | 0.08h | 6.25 |
| 151 | 9.3 | **Network plan** | 1.01d | 2006-04-17 08:00 | 2006-04-18 08:05 |  | 6d |  |  |  | 11.08h | 831.25 |
| 152 | 9.3.1 | Develop document detailing network plan | 5h | 2006-04-17 08:00 | 2006-04-17 14:00 |  | 6d | 0d |  | Dick | 5h | 375 |
| 153 | 9.3.2 | Review network plan document | 1h | 2006-04-17 14:00 | 2006-04-17 15:00 | 152 | 6d | 0d |  | Dick; Lukasz; Mike; Rachel | 4h | 300 |
| 154 | 9.3.3 | Compile final network plan document | 2h | 2006-04-17 15:00 | 2006-04-17 17:00 | 153 | 6d | 0d |  | Rachel | 2h | 150 |
| 155 | 9.3.4 | Submit final network plan document | 5min | 2006-04-18 08:00 | 2006-04-18 08:05 | 154 | 6d |  |  | Rachel | 0.08h | 6.25 |
| 156 | 9.4 | **Revisions** | 1d | 2006-04-17 08:00 | 2006-04-17 17:00 |  | 0d |  |  |  | 32h | 2,400 |
| 157 | 9.4.1 | Commerce Manager > Product Catalog Module | 1h | 2006-04-17 08:00 | 2006-04-17 09:00 |  | 0.88d |  |  | Lukasz; Mike | 2h | 150 |
| 158 | 9.4.2 | Commerce Manager > Settings Module | 1h | 2006-04-17 08:00 | 2006-04-17 09:00 |  | 0.88d |  |  | Lukasz; Mike | 2h | 150 |
| 159 | 9.4.3 | Commerce Manager > Customers Module | 1h | 2006-04-17 08:00 | 2006-04-17 09:00 |  | 0.88d |  |  | Lukasz; Mike | 2h | 150 |
| 160 | 9.4.4 | Commerce Manager > Orders Module | 1h | 2006-04-17 08:00 | 2006-04-17 09:00 |  | 0.88d |  |  | Lukasz; Mike | 2h | 150 |
| 161 | 9.4.5 | Storefront | 4h | 2006-04-17 08:00 | 2006-04-17 12:00 |  | 0.5d |  |  | Lukasz; Mike | 8h | 600 |
| 162 | 9.4.6 | Storefront Web Services API | 8h | 2006-04-17 08:00 | 2006-04-17 17:00 |  | 0d |  |  | Lukasz; Mike | 16h | 1,200 |
| 163 | 9.5 | Preparing API documentation | 4h | 2006-04-18 08:00 | 2006-04-18 12:00 | 156 | 5.51d |  |  | Lukasz; Mike | 8h | 600 |
| 164 | 9.6 | Preparing Software Manual | 20h | 2006-04-18 08:00 | 2006-04-20 12:00 | 156 | 2.01d | 0d |  | Dick; Rachel | 40h | 3,000 |

| ID | WBS | Task | Duration | Start | Finish | Predecessors | Total slack | Free slack | Resources | Work | Cost |
| --- | --- | --- | --- | --- | --- | --- | --- | --- | --- | --- | --- |
| 165 | 9.7 | **Final report** | 0.76d | 2006-04-18 08:00 | 2006-04-18 15:05 | 156 | 0d |  |  | 21.08h | 1,581.25 |
| 166 | 9.7.1 | Develop Section 1: Executive Summary | 2h | 2006-04-18 08:00 | 2006-04-18 10:00 |  | 0d |  | Rachel | 2h | 150 |
| 167 | 9.7.2 | Develop Section 2: Introduction | 2h | 2006-04-18 08:00 | 2006-04-18 10:00 |  | 0d |  | Rachel | 2h | 150 |
| 168 | 9.7.3 | Develop Section 3: Client Organization and Description | 1h | 2006-04-18 08:00 | 2006-04-18 09:00 |  | 0.12d |  | Dick | 1h | 75 |
| 169 | 9.7.4 | Develop Section 4: Project Team (Identify team member roles) | 1h | 2006-04-18 08:00 | 2006-04-18 09:00 |  | 0.12d |  | Dick | 1h | 75 |
| 170 | 9.7.5 | Develop Section 5: Problem Statement | 1h | 2006-04-18 08:00 | 2006-04-18 09:00 |  | 0.12d |  | Dick | 1h | 75 |
| 171 | 9.7.6 | Develop Section 6: Strategy and Outline for the Solution (Mini-Strategic Plan) | 1h | 2006-04-18 08:00 | 2006-04-18 09:00 |  | 0.12d |  | Lukasz | 1h | 75 |
| 172 | 9.7.7 | Develop Section 7: Analysis Methodology | 1h | 2006-04-18 08:00 | 2006-04-18 09:00 |  | 0.12d |  | Lukasz | 1h | 75 |
| 173 | 9.7.8 | Develop Section 8: IS/IT Design (Requirements, Code, Screenshots, Database) | 1h | 2006-04-18 08:00 | 2006-04-18 09:00 |  | 0.12d |  | Mike | 1h | 75 |
| 174 | 9.7.9 | Develop Section 9: Financial and Cost-Benefit Analysis | 1h | 2006-04-18 08:00 | 2006-04-18 09:00 |  | 0.12d |  | Mike | 1h | 75 |
| 175 | 9.7.10 | Develop Section 10: Project Management Plan/Schedule | 1h | 2006-04-18 08:00 | 2006-04-18 09:00 |  | 0.12d |  | Rachel | 1h | 75 |
| 176 | 9.7.11 | Develop Section 11: Post-Turnover Plan including Education, Training, Maintenance, and Support | 1h | 2006-04-18 08:00 | 2006-04-18 09:00 |  | 0.12d |  | Lukasz | 1h | 75 |
| 177 | 9.7.12 | Develop Section 12: Results | 2h | 2006-04-18 08:00 | 2006-04-18 10:00 |  | 0d |  | Mike | 2h | 150 |
| 178 | 9.7.13 | Develop Section 13: Summary and Conclusions | 2h | 2006-04-18 08:00 | 2006-04-18 10:00 |  | 0d |  | Rachel | 2h | 150 |
| 179 | 9.7.14 | Compile final report | 4h | 2006-04-18 10:00 | 2006-04-18 15:00 | 166, 167, 168, 169, 170, 171, 172, 173, 174, 175, 176, 177, 178 | 0d |  | Rachel | 4h | 300 |
| 180 | 9.7.15 | Submit final report | 5min | 2006-04-18 15:00 | 2006-04-18 15:05 | 179 | 0d |  | Rachel | 0.08h | 6.25 |
| 181 | 9.8 | Client Training | 10h | 2006-04-20 13:00 | 2006-04-21 15:00 | 164 | 2.01d | 0d | Rachel; Dick | 20h | 1,500 |
| 182 | 9.9 | Production Release 1.0 | 1h | 2006-04-21 15:00 | 2006-04-21 16:00 | 181 | 2.01d | 0d | Lukasz | 1h | 75 |
| 183 | 9.10 | Update project management plan/schedule | 1h | 2006-04-21 16:00 | 2006-04-21 17:00 | 182 | 2.01d |  | Rachel | 1h | 75 |
| 184 | 9.11 | **Project Presentation** | 5.25d | 2006-04-18 15:05 | 2006-04-26 08:05 | 165 | 0d |  |  | 168h | 12,600 |
| 185 | 9.11.1 | Preparation for final presentation | 3d | 2006-04-18 15:05 | 2006-04-21 15:05 |  | 0d |  | Dick; Lukasz; Mike; Rachel | 96h | 7,200 |
| 186 | 9.11.2 | Review final presentation | 2d | 2006-04-21 15:05 | 2006-04-25 15:05 | 185 | 0d |  | Dick; Lukasz; Mike; Rachel | 64h | 4,800 |
| 187 | 9.11.3 | Final presentation | 0.25d | 2006-04-25 15:05 | 2006-04-26 08:05 | 186 | 0d |  | Dick; Lukasz; Mike; Rachel | 8h | 600 |
